# MPP_Template

Schedule from MS Project, 2012-07-03 to 2013-01-21, A marks actual dates.
Hewlett-Packard

## Calendars

- Standard: Mon-Fri 08:00-12:00, 13:00-17:00; Sat-Sun off.

## Resources

| Resource |
| --- |
| PM: Richard |
| SD4:春呈 |
| SD2:紘杰 |
| SD3:Simon |
| SE3 |
| Customer: Jason |
| SV: Jack |
| SA: Richard |
| SD1: KaiYue |

## Schedule

| ID | WBS | Task | Duration | Start | Finish | Predecessors | Complete | Remaining | Baseline start | Baseline finish | Baseline duration | Total slack | Free slack | Constraint | Resources | Work | Actual work | Text1 | Text8 | Text2 |
| --- | --- | --- | --- | --- | --- | --- | --- | --- | --- | --- | --- | --- | --- | --- | --- | --- | --- | --- | --- | --- |
| 1 | 1 | CSP-Consumable_Spare_Parts_Material_Control System | 106d | 2012-07-03 | 2012-11-27 |  |  |  | 2008-08-12 | 2008-12-26 | 101d | 4.5d |  | finish no earlier than 2012-11-27 |  |  |  | Project |  |  |
| 2 | 2 | **Engineering Activities** | 49d | 2012-07-03 | 2012-09-07 |  |  |  | 2008-07-28 | 2008-12-26 | 112d | 126.67d |  |  |  | 184h |  | Lifecycle |  |  |
| 3 | 2.1 | **Project Initiation** | 49d | 2012-07-03 | 2012-09-07 |  |  |  | 2008-07-28 | 2008-08-01 | 5d | 126.67d |  |  |  | 184h |  | Phase |  |  |
| 4 | 2.1.1 | **Define Scope** | 5d | 2012-07-03 | 2012-07-09 |  |  |  | 2008-07-28 | 2008-08-01 | 5d | 170.67d |  |  |  | 16h |  | Activity | key:8 |  |
| 5 | 2.1.1.1 | Define project Scope | 5d | 2012-07-03 | 2012-07-09 |  |  |  | 2008-07-28 | 2008-08-01 | 5d | 101d |  | start no earlier than 2012-07-03 | PM: Richard [10%]; SA: Richard [10%] | 8h |  | Task | key:12 | Project Mgmt. |
| 6 | 2.1.1.2 | Develop Work Breakdown Structure | 5d | 2012-07-03 | 2012-07-09 |  |  |  | 2008-07-28 | 2008-08-01 | 5d | 101d |  | start no earlier than 2012-07-03 | PM: Richard [10%]; SA: Richard [10%] | 8h |  | Task | key:14 | Project Mgmt. |
| 7 | 2.1.2 | **Preparation** | 49d | 2012-07-03 | 2012-09-07 |  |  |  | 2008-07-28 | 2008-08-01 | 5d | 126.67d |  |  |  | 168h |  | Activity |  |  |
| 8 | 2.1.2.3 | Set Up Project Management Tools | 2d | 2012-07-03 | 2012-07-04 |  |  |  | 2008-07-28 | 2008-08-01 | 5d | 173.67d |  | start no earlier than 2012-07-03 | SA: Richard [50%] | 8h |  | Task | key:55 | Project Mgmt. |
| 9 | 2.1.2.4 | Set Up Project develop Tools | 10d | 2012-08-27 | 2012-09-07 |  |  |  | 2008-07-28 | 2008-08-01 | 5d | 126.67d |  | start no earlier than 2012-08-27 | SD1: KaiYue; SD4:春呈; SD2:紘杰 [50%]; SD3:Simon [50%] | 160h |  | Task |  | Project Mgmt. |
| 10 | 2.2 | **Project Kickoff** | 98d? | 2012-09-06 A | 2013-01-21 |  | 4% | 94.29d? | 2008-08-12 | 2008-08-13 | 1.5d | 0d |  |  |  | 4687.09h | 221.87h | Activity |  |  |
| 11 | 2.2.2 | Project Kickoff Meeting | 0.5d | 2012-09-06 | 2012-09-06 |  |  |  | 2008-08-13 | 2008-08-13 | 0.5d | 2d | 0d | start no earlier than 2012-09-06 | Customer: Jason; SV: Jack; PM: Richard | 10h |  | Task |  | Project Mgmt. |
| 13 | 2.3 | **CSP New Modules** | 97.5d? | 2012-09-06 A | 2013-01-21 | 11 | 4% | 93.97d? | 2008-08-11 | 2008-09-30 | 39d | 0d |  |  |  | 3304.42h | 131.87h | SubProject |  |  |
| 14 | 2.3.1 | **Requirements, System and Acceptance Test Planning** | 57.5d? | 2012-09-06 A | 2012-11-26 |  | 3% | 55.83d? | 2008-08-11 | 2008-08-22 | 10d | 0.73d |  |  |  | 1134h | 83.87h | Phase |  | Org Audit |
| 15 | 2.3.1.1 | **Requirements Engineering** | 57.5d? | 2012-09-06 A | 2012-11-26 |  | 3% | 55.83d? | 2008-08-11 | 2008-08-22 | 10d | 0.73d |  |  |  | 1134h | 83.87h | Activity | key:66 |  |
| 16 | 2.3.1.1.1 | **Define Requirements & prepare SRS** | 57.5d? | 2012-09-06 A | 2012-11-26 |  | 3% | 55.83d? | 2008-08-11 | 2008-08-19 | 7d | 0.73d |  |  |  | 1134h | 83.87h | Task | key:67 | Engineering Activity |
| 17 | 3.2.1.1.1.1 | **基本資料 查詢(BASIC)** | 2d? | 2012-09-06 | 2012-09-10 |  |  |  |  |  |  | 21.5d | 0d |  | SA: Richard; SD2:紘杰 [50%]; SD1: KaiYue [50%]; SD3:Simon [50%]; SD4:春呈 [50%] | 48h | 48h |  |  |  |
| 18 | 3.2.1.1.1.1.1 | 員工資料 | 1d? | 2012-09-06 | 2012-09-07 |  |  |  |  |  |  | 21.5d | 0d |  |  |  |  |  |  |  |
| 19 | 3.2.1.1.1.1.2 | 供應商資料 | 1d? | 2012-09-07 | 2012-09-10 | 18 |  |  |  |  |  | 21.5d |  |  |  |  |  |  |  |  |
| 20 | 3.2.1.1.1.2 | Review & Rework SRS | 2d | 2012-09-10 A | 2012-09-12 A | 19 | 100% |  |  |  |  |  |  | start no earlier than 2012-07-06 | SA: Richard; SD1: KaiYue [50%] | 24h | 24h |  |  |  |
| 21 | 3.2.1.1.1.3 | **料號主檔 查詢(ITEMLIST)** | 31.5d | 2012-09-10 | 2012-10-23 | 17 |  |  |  |  |  | 0d |  |  | SA: Richard; SD2:紘杰 [50%] | 630h |  |  |  |  |
| 22 | 3.2.1.1.1.3.1 | 料號 主檔 | 25d | 2012-09-10 | 2012-10-15 |  |  |  |  |  |  | 5.5d | 0d |  | SA: Richard | 200h |  |  |  |  |
| 23 | 3.2.1.1.1.3.2 | 料號 總覽 | 3d | 2012-10-16 | 2012-10-18 |  |  |  |  |  |  | 0d |  | start no earlier than 2012-10-16 | SA: Richard | 24h |  |  |  |  |
| 24 | 3.2.1.1.1.3.3 | 部門內控管料號 | 1d | 2012-10-19 | 2012-10-19 | 23 |  |  |  |  |  | 0d |  |  | SA: Richard | 8h |  |  |  |  |
| 25 | 3.2.1.1.1.3.4 | 料號與替代料號對應總覽 | 1d | 2012-10-22 | 2012-10-22 | 24 |  |  |  |  |  | 0d |  |  | SA: Richard | 8h |  |  |  |  |
| 26 | 3.2.1.1.1.3.5 | Review & Rework SRS | 1d | 2012-10-23 | 2012-10-23 | 25 |  |  |  |  |  | 0d |  | start no earlier than 2012-07-06 | SA: Richard; SD2:紘杰 [50%] | 12h |  |  |  |  |

Notes:
- 15: Define the system requirements.
- 16: Prepare necessary inputs for SRS

| ID | WBS | Task | Duration | Start | Finish | Predecessors | Complete | Remaining | Baseline start | Baseline finish | Baseline duration | Total slack | Free slack | Constraint | Resources | Work | Actual work | Text1 | Text2 | Text8 |
| --- | --- | --- | --- | --- | --- | --- | --- | --- | --- | --- | --- | --- | --- | --- | --- | --- | --- | --- | --- | --- |
| 28 | 3.2.1.1.1.4 | **系統登錄(LOGIN)&主頁(MP)** | 2d | 2012-10-24 | 2012-10-25 | 21 |  |  |  |  |  | 0d |  |  |  |  |  |  |  |  |
| 29 | 3.2.1.1.1.4.1 | Review & Rework SRS | 2d | 2012-10-24 | 2012-10-25 |  |  |  |  |  |  | 0d |  | start no earlier than 2012-07-06 |  |  |  |  |  |  |
| 30 | 3.2.1.1.1.5 | **系統維護(SYS)** | 2d | 2012-10-26 | 2012-10-29 | 28 |  |  |  |  |  | 0d |  |  |  |  |  |  |  |  |
| 31 | 3.2.1.1.1.5.1 | Review & Rework SRS | 2d | 2012-10-26 | 2012-10-29 |  |  |  |  |  |  | 0d |  | start no earlier than 2012-07-06 |  |  |  |  |  |  |
| 32 | 3.2.1.1.1.6 | **歷史查詢(HIS)** | 2d | 2012-10-30 | 2012-10-31 | 30 |  |  |  |  |  | 0d |  |  |  |  |  |  |  |  |
| 33 | 3.2.1.1.1.6.1 | Review & Rework SRS | 2d | 2012-10-30 | 2012-10-31 |  |  |  |  |  |  | 0d |  | start no earlier than 2012-07-06 |  |  |  |  |  |  |
| 34 | 3.2.1.1.1.7 | **申請作業(APPL)** | 15d | 2012-11-01 | 2012-11-21 | 32 |  |  |  |  |  | 0d |  |  | SA: Richard | 120h |  |  |  |  |
| 35 | 3.2.1.1.1.7.1 | 料號新增/規格異動 | 10d | 2012-11-01 | 2012-11-14 |  |  |  |  |  |  | 0d |  |  |  |  |  |  |  |  |
| 36 | 3.2.1.1.1.7.2 | 94階 料號 庫存異動 | 5d | 2012-11-15 | 2012-11-21 | 35 |  |  |  |  |  | 0d |  |  |  |  |  |  |  |  |
| 37 | 3.2.1.1.1.7.3 | 94階 保養需求 | 5d | 2012-11-15 | 2012-11-21 | 35 |  |  |  |  |  | 0d |  |  |  |  |  |  |  |  |
| 38 | 3.2.1.1.1.7.4 | Review & Rework SRS | 5d | 2012-11-01 | 2012-11-07 |  |  |  |  |  |  | 10d | 0d | start no earlier than 2012-07-06 |  |  |  |  |  |  |
| 39 | 3.2.1.1.1.8 | **審核作業(REV)** | 2d | 2012-11-22 | 2012-11-23 | 34 |  |  |  |  |  | 0d |  |  |  |  |  |  |  |  |
| 40 | 3.2.1.1.1.8.1 | Review & Rework SRS | 2d | 2012-11-22 | 2012-11-23 |  |  |  |  |  |  | 0d |  | start no earlier than 2012-07-06 |  |  |  |  |  |  |
| 41 | 3.2.1.1.1.9 | **查詢/重訂購- 控管量(ROP)** | 1d | 2012-11-26 | 2012-11-26 | 39 |  |  |  |  |  | 0.73d |  |  |  | 8h |  |  |  |  |
| 42 | 2.3.1.1.3 | Review & Rework SRS | 1d | 2012-11-26 | 2012-11-26 |  |  |  | 2008-08-20 | 2008-08-21 | 2d | 0.73d | 0d | finish no earlier than 2008-08-21 |  | 8h |  | Task | Review | key:69 |
| 43 | 2.3.4 | **Coding & Unit Test** | 93.5d | 2012-09-12 A | 2013-01-21 |  | 4% | 89.81d | 2008-09-08 | 2008-09-28 | 17d | 0d |  |  |  | 2170.42h | 48h | Phase |  |  |
| 44 | 3.2.2.1 | **Coding & Unit Test - Module 基本資料查詢** | 17d | 2012-09-12 A | 2012-10-05 |  | 86% | 2.43d | 2008-09-16 | 2008-09-25 | 8d | 96.17d |  |  |  | 56h | 48h | Activity |  |  |
| 45 | 3.2.2.1.1 | Coding & Unit Test of Module 基本資料查詢 | 5d | 2012-09-12 A | 2012-09-19 A | 20 | 100% |  | 2008-09-16 | 2008-09-24 | 7d |  |  | start no earlier than 2004-03-31 | SD1: KaiYue [50%]; SD2:紘杰 [50%] | 40h | 40h | Task | Engineering Activity |  |
| 46 | 3.2.2.1.2 | Code Review of Module 基本資料查詢 | 1d | 2012-09-26 A | 2012-09-27 A | 96 | 100% |  | 2008-09-25 | 2008-09-25 | 1d |  |  | start no earlier than 2004-03-31 | SD1: KaiYue [50%]; SD2:紘杰 [50%] | 8h | 8h | Task | Review |  |
| 47 | 3.2.2.1.3 | Review & Rework & Verify on Module 基本資料查詢 | 1d | 2012-10-04 | 2012-10-05 | 97 |  |  | 2008-09-26 | 2008-09-27 | 2d | 96.17d |  | finish no earlier than 2008-09-27 | SD1: KaiYue [50%]; SD2:紘杰 [50%] | 8h |  | Task | Rework |  |
| 48 | 3.2.2.2 | **Coding & Unit Test - Module 料號主檔 查詢** | 27d | 2012-10-15 | 2012-11-21 |  |  |  | 2008-09-23 | 2008-09-27 | 5d | 55.77d |  |  |  | 312h |  | Activity |  |  |
| 49 | 3.2.2.2.1 | **Coding & Unit Test of Module 料號主檔/總覽 查詢** | 15d | 2012-10-15 | 2012-11-05 |  |  |  | 2008-09-23 | 2008-09-26 | 4d | 55.77d | 0d |  | SD1: KaiYue [50%]; SD2:紘杰 [50%] | 280h |  | Task | Engineering Activity |  |
| 50 | 3.2.2.2.1.1 | 料號 主檔 | 15d | 2012-10-15 | 2012-11-05 | 22 |  |  |  |  |  | 55.77d |  |  | SD2:紘杰 [50%] | 60h |  |  |  |  |
| 51 | 3.2.2.2.1.2 | 料號 總覽 | 5d | 2012-10-19 | 2012-10-25 | 23 |  |  |  |  |  | 57.27d | 0d |  | SA: Richard | 40h |  |  |  |  |
| 52 | 3.2.2.2.1.3 | 部門內控管料號 | 5d | 2012-10-22 | 2012-10-26 | 24 |  |  |  |  |  | 68.67d |  |  | SA: Richard | 40h |  |  |  |  |
| 53 | 3.2.2.2.1.4 | 料號與替代料號對應總覽 | 5d | 2012-10-26 | 2012-11-01 | 51 |  |  |  |  |  | 57.27d |  |  | SD1: KaiYue [50%] | 20h |  |  |  |  |
| 54 | 3.2.2.2.2 | Code Review of Module 料號主檔/總覽 查詢 | 2d | 2012-11-12 | 2012-11-14 | 99 |  |  | 2008-09-27 | 2008-09-27 | 1d | 55.77d | 0d | start no earlier than 2004-03-31 | SD2:紘杰 [50%]; SD1: KaiYue [50%] | 16h |  | Task | Review |  |
| 55 | 3.2.2.2.3 | Review & Rework & Verify on Module 料號主檔/總覽 查詢 | 2d | 2012-11-19 | 2012-11-21 | 100 |  |  | 2008-09-28 | 2008-09-28 | 1d | 55.77d |  | start no earlier than 2004-03-31 | SD1: KaiYue [50%]; SD2:紘杰 [50%] | 16h |  | Task | Rework |  |

Notes:
- 42: Conduct a forma review for SRS
- 44: 1.員工資料 / 2.供應商 / 3.系統開立帳號與權限清單 / 4.部門已開立帳號與權限清單 / 5.開立帳號現況總覽 / 6.零件主檔 / 7.零件主檔 for MC
- 45: Develop detailed programs by using designs and other standards
- 46: Identify peers and conduct code reviews by using standard checklists and other standards
- 47: Fix code review defects and other best practices suggested by the peers / reviewers
- 48: 92階料號 主檔[by itemnum] / 92階料號 主檔(for MC)[by itemnum] / 92階料號 總覽[by deptcode] / 93階料號 主檔[by itemnum] / 93階料號 總覽[by deptcode] / 94階料號 主檔[by itemnum] / 94階料號 主檔(for MC)[by itemnum] / 94階料號 總覽[by deptcode] / 94階料號 總覽 For MC[by deptcode ](?:確認是否可以整併) / 查詢-94階料號 控管量 for_pur / 部門內控管料號 / 料號與替代料號對應總覽
- 49: Develop detailed programs by using designs and other standards
- 54: Identify peers and conduct code reviews by using standard checklists and other standards
- 55: Fix code review defects and other best practices suggested by the peers / reviewers

| ID | WBS | Task | Duration | Start | Finish | Predecessors | Baseline start | Baseline finish | Baseline duration | Total slack | Free slack | Constraint | Resources | Work | Text1 | Text2 |
| --- | --- | --- | --- | --- | --- | --- | --- | --- | --- | --- | --- | --- | --- | --- | --- | --- |
| 56 | 2.3.4.1 | **Coding & Unit - Module 系統登錄 + 首頁** | 14d | 2012-10-26 | 2012-11-14 |  | 2008-09-08 | 2008-09-15 | 6d | 48d |  |  |  | 121.25h | Activity |  |
| 57 | 2.3.4.1.1 | Coding & Unit Test of Module 系統登錄 + 首頁 | 5d | 2012-10-26 | 2012-11-01 | 29 | 2008-09-08 | 2008-09-12 | 5d | 48d | 0d | start no earlier than 2004-03-31 | SD1: KaiYue; SD2:紘杰 | 80h | Task | Engineering Activity |
| 58 | 2.3.4.1.2 | Code Review of Module 系統登錄 + 首頁 | 1d | 2012-11-09 | 2012-11-09 | 102 | 2008-09-15 | 2008-09-15 | 1d | 48d | 0d | start no earlier than 2004-03-31 | SD1: KaiYue; SA: Richard; SD2:紘杰 | 24h | Task | Review |
| 59 | 3.2.2.3.3 | Review & Rework & Verify on Module 系統登錄 + 首頁 | 1d | 2012-11-14 | 2012-11-14 | 103 | 2008-09-16 | 2008-09-17 | 2d | 48d |  | start no earlier than 2004-03-31 | SD1: KaiYue; SA: Richard; SD2:紘杰 | 17.25h | Task | Rework |
| 60 | 2.3.4.7 | **Coding & Unit Test - Module 系統維護** | 37d | 2012-10-30 | 2012-12-19 |  | 2008-09-16 | 2008-09-25 | 8d | 23d |  |  |  | 400h | Activity |  |
| 61 | 2.3.4.7.1 | Coding & Unit Test of Module 系統維護 | 22d | 2012-10-30 | 2012-11-28 | 31 | 2008-09-16 | 2008-09-24 | 7d | 23d | 0d | start no earlier than 2004-03-31 | SD1: KaiYue; SD2:紘杰 | 352h | Task | Engineering Activity |
| 62 | 2.3.4.7.2 | Code Review of Module 系統維護 | 1d | 2012-12-13 | 2012-12-13 | 105 | 2008-09-25 | 2008-09-25 | 1d | 23d | 0d | start no earlier than 2004-03-31 | SD1: KaiYue; SD2:紘杰 | 16h | Task | Review |
| 63 | 2.3.4.8 | Review & Rework & Verify on Module 系統維護 | 2d | 2012-12-18 | 2012-12-19 | 106 | 2008-09-26 | 2008-09-27 | 2d | 23d |  | finish no earlier than 2008-09-27 | SD1: KaiYue; SD2:紘杰 | 32h | Task | Rework |
| 64 | 3.2.2.5 | **Coding & Unit Test - Module 歷史查詢** | 34d | 2012-11-01 | 2012-12-18 |  | 2008-09-23 | 2008-09-27 | 5d | 24d |  |  |  | 272h | Activity |  |
| 65 | 3.2.2.5.1 | Coding & Unit Test of Module 歷史查詢 | 15d | 2012-11-01 | 2012-11-21 | 33 | 2008-09-23 | 2008-09-26 | 4d | 24d | 0d | start no earlier than 2004-03-31 | SD3:Simon; SD1: KaiYue | 240h | Task | Engineering Activity |
| 66 | 3.2.2.5.2 | Code Review of Module 歷史查詢 | 1d | 2012-12-13 | 2012-12-13 | 108 | 2008-09-27 | 2008-09-27 | 1d | 24d | 0d |  | SD1: KaiYue [50%]; SD3:Simon [50%] | 8h | Task | Review |
| 67 | 3.2.2.5.3 | Review & Rework & Verify on Module 歷史查詢 | 1d | 2012-12-18 | 2012-12-18 | 109 | 2008-09-28 | 2008-09-28 | 1d | 24d |  | start no earlier than 2004-03-31 | SD1: KaiYue; SA: Richard; SD3:Simon | 24h | Task | Rework |
| 68 | 2.3.4.3 | **Coding & Unit Test - Module 申請作業** | 43d | 2012-11-08 | 2013-01-07 |  | 2008-09-08 | 2008-09-22 | 11d | 10d |  |  |  | 417.18h | Activity |  |
| 69 | 2.3.4.3.1 | Coding & Unit Test of Module 申請作業 | 22d | 2012-11-08 | 2012-12-07 | 38 | 2008-09-08 | 2008-09-19 | 10d | 10d | 0d | start no earlier than 2004-03-31 | SD3:Simon; SD1: KaiYue | 352h | Task | Engineering Activity |
| 70 | 2.3.4.3.2 | Code Review of Module 申請作業 | 2d | 2012-12-31 | 2013-01-01 | 111 | 2008-09-22 | 2008-09-22 | 1d | 10d | 0d |  | SD1: KaiYue; SD3:Simon | 32h | Task | Review |
| 71 | 3.2.2.6.3 | Review & Rework & Verify on Module 申請作業 | 2d | 2013-01-04 | 2013-01-07 | 112 | 2008-09-23 | 2008-09-24 | 2d | 10d |  | start no earlier than 2004-03-31 | SD1: KaiYue; SD3:Simon; SA: Richard | 33.18h | Task | Rework |
| 72 | 2.3.4.5 | **Coding & Unit Test - Module 審核作業** | 41d | 2012-11-26 | 2013-01-21 |  | 2008-09-23 | 2008-09-27 | 5d | 0d |  |  |  | 392h | Activity |  |
| 73 | 2.3.4.5.1 | Coding & Unit Test of Module 審核作業 | 22d | 2012-11-26 | 2012-12-25 | 40 | 2008-09-23 | 2008-09-26 | 4d | 0d |  | start no earlier than 2004-03-31 | SD3:Simon; SD1: KaiYue | 352h | Task | Engineering Activity |
| 74 | 2.3.4.5.2 | Code Review of Module 審核作業 | 1d | 2013-01-16 | 2013-01-16 | 114 | 2008-09-27 | 2008-09-27 | 1d | 0d |  | start no earlier than 2004-03-31 | SD1: KaiYue; SD3:Simon | 16h | Task | Review |
| 75 | 2.3.4.6 | Review & Rework & Verify on Module 審核作業 | 1d | 2013-01-21 | 2013-01-21 | 115 | 2008-09-28 | 2008-09-28 | 1d | 0d |  | start no earlier than 2004-03-31 | SD1: KaiYue; SA: Richard; SD3:Simon | 24h | Task | Rework |
| 76 | 3.2.2.8 | **Coding & Unit Test - Module 查詢/重訂購- 控管量** | 29d | 2012-11-27 | 2013-01-04 |  | 2008-09-23 | 2008-09-27 | 5d | 0.73d | 0d |  |  | 200h | Activity |  |
| 77 | 3.2.2.8.1 | Coding & Unit Test of Module查詢/重訂購- 控管量 | 10d | 2012-11-27 | 2012-12-10 | 42 | 2008-09-23 | 2008-09-26 | 4d | 0.73d | 0d | start no earlier than 2004-03-31 | SD3:Simon; SD1: KaiYue | 160h | Task | Engineering Activity |
| 78 | 3.2.2.8.2 | Code Review of Module 查詢/重訂購- 控管量 | 1d | 2013-01-01 | 2013-01-01 | 117 | 2008-09-27 | 2008-09-27 | 1d | 0.73d | 0d | start no earlier than 2004-03-31 | SD1: KaiYue; SD3:Simon | 16h | Task | Review |
| 79 | 3.2.2.8.3 | Review & Rework & Verify on Module 查詢/重訂購- 控管量 | 1d | 2013-01-04 | 2013-01-04 | 118 | 2008-09-28 | 2008-09-28 | 1d | 0.73d |  | start no earlier than 2004-03-31 | SD1: KaiYue; SA: Richard; SD3:Simon | 24h | Task | Rework |

Notes:
- 57: Develop detailed programs by using designs and other standards
- 58: Identify peers and conduct code reviews by using standard checklists and other standards
- 59: Fix code review defects and other best practices suggested by the peers / reviewers
- 60: 1.公司(CMO,CMOCHINA,CMECHINA) / [依ERP 公司帳本來分類; D:ITEAM教材00.Password&TNSERP_OU_NO_mappingtable.xls] / 1.1 倉庫 / 1.2 呆滯天數參數設定 / 2.類別 / 3.貨幣 / 4.匯率 / 5.簽核流程 / 5.2工作流程管理 / 5.3工作流程設計(BIZ Flow) / 5.4動作 / 5.5角色 / 5.6聯絡範本 / 6.時效管理機制(alert mail & trigger even) / 7.授權 / 7.1安全群組(group) / 7.2使用者(maxuser) / 8.部門廠區對應維護與查詢 / 9.消滅部門與其主管查詢(維護)表 / 10.每日資料拋轉機制Monitor / 11.流程內申請單狀態變更作業 / 12.公佈欄
- 61: Develop detailed programs by using designs and other standards
- 62: Identify peers and conduct code reviews by using standard checklists and other standards
- 63: Fix code review defects and other best practices suggested by the peers / reviewers
- 64: 92階 料號新增/ 庫存異動 / 92階 非週期性需求 / 93階 料號新增/ 庫存異動 / 93階 訂製品需求 / 94階 料號新增/ 庫存異動 / 94階 保養需求 / 料號規格異動
- 65: Develop detailed programs by using designs and other standards
- 66: Identify peers and conduct code reviews by using standard checklists and other standards
- 67: Fix code review defects and other best practices suggested by the peers / reviewers
- 68: 92階 料號新增/ 庫存異動 / 92階 非週期性需求 / 93階 料號新增/ 庫存異動 / 93階 訂製品需求 / 94階 料號新增/ 庫存異動 / 94階 保養需求 / 料號規格異動
- 69: Develop detailed programs by using designs and other standards
- 70: Identify peers and conduct code reviews by using standard checklists and other standards
- 71: Fix code review defects and other best practices suggested by the peers / reviewers
- 72: 92階 料號新增/ 庫存異動 / 92階 非週期性需求 / 93階 料號新增/ 庫存異動 / 93階 訂製品需求 / 94階 料號新增/ 庫存異動 / 94階 保養需求 / 料號規格異動 / 審核完畢之(待開立PR)申請單
- 73: Develop detailed programs by using designs and other standards
- 74: Identify peers and conduct code reviews by using standard checklists and other standards
- 75: Fix code review defects and other best practices suggested by the peers / reviewers
- 76: 查詢/重訂購- 92階料號 控管量 [ 未啟用:重訂購] / 查詢/重訂購-93階料號 控管量[ 未啟用:重訂購] / 查詢/重訂購-94階料號 控管量[已啟用:重訂購]
- 77: Develop detailed programs by using designs and other standards
- 78: Identify peers and conduct code reviews by using standard checklists and other standards
- 79: Fix code review defects and other best practices suggested by the peers / reviewers

| ID | WBS | Task | Duration | Start | Finish | Predecessors | Complete | Remaining | Baseline start | Baseline finish | Baseline duration | Total slack | Free slack | Constraint | Resources | Work | Actual work | Text1 | Text2 |
| --- | --- | --- | --- | --- | --- | --- | --- | --- | --- | --- | --- | --- | --- | --- | --- | --- | --- | --- | --- |
| 81 | 2.5 | **System test** | 8.67d | 2013-01-07 | 2013-01-17 |  |  |  | 2008-10-08 | 2008-10-14 | 5d | 0.73d |  |  |  | 148h |  | Activity |  |
| 82 | 2.5 | **Integration Test** | 5.33d | 2013-01-07 | 2013-01-14 | 76 |  |  | 2008-10-08 | 2008-10-10 | 3d | 0.73d | 0d |  |  | 88h |  | Phase |  |
| 83 | 2.5.2.1 | Establish Integration Test Environment | 1.5d | 2013-01-07 | 2013-01-08 |  |  |  | 2008-10-08 | 2008-10-08 | 1d | 4.57d |  | start no earlier than 2008-10-08 | SD1: KaiYue; SD4:春呈 | 24h |  | Task | Testing |
| 84 | 2.5.2.2 | Integration testing of various modules & Document Test Results | 4d | 2013-01-07 | 2013-01-10 |  |  |  | 2008-10-08 | 2008-10-09 | 2d | 0.73d | 0d | start no earlier than 2008-10-08 | SD4:春呈 | 32h |  | Task | Testing |
| 85 | 2.5.2.3 | Rework & Verification related to Integration Testing | 1.33d | 2013-01-11 | 2013-01-14 | 84 |  |  | 2008-10-10 | 2008-10-10 | 1d | 0.73d |  | start no earlier than 2008-10-08 | SD1: KaiYue; SA: Richard; SD4:春呈 | 32h |  | Task | Rework |
| 86 | 2.5.3 | **Performance Test** | 3.33d | 2013-01-14 | 2013-01-17 | 82 |  |  | 2008-10-13 | 2008-10-14 | 2d | 0.73d | 0d |  |  | 60h |  | Phase |  |
| 87 | 2.5.3.1 | Establish System Test Environment | 1.2d | 2013-01-14 | 2013-01-15 |  |  |  | 2008-10-13 | 2008-10-13 | 1d | 2.87d |  | start no earlier than 2008-10-08 | SD1: KaiYue; SD4:春呈 | 12h |  | Task | Testing |
| 88 | 2.5.3.2 | Conduct System Testing & Document Test Results | 2d | 2013-01-14 | 2013-01-16 |  |  |  | 2008-10-13 | 2008-10-13 | 1d | 0.73d | 0d | start no earlier than 2004-03-31 | SD4:春呈 | 16h |  | Task | Testing |
| 89 | 2.5.3.3 | Rework & Verification related to System Testing | 1.33d | 2013-01-16 | 2013-01-17 | 88 |  |  | 2008-10-14 | 2008-10-14 | 1d | 0.73d |  | start no earlier than 2004-03-31 | SD1: KaiYue; SA: Richard; SD4:春呈 | 32h |  | Task | Rework |
| 90 | 2.6 | **Release** | 1.6d | 2013-01-17 | 2013-01-21 | 86 |  |  | 2008-10-15 | 2008-10-16 | 2d | 0.73d |  |  |  | 24h |  | Phase |  |
| 91 | 2.6.1 | Preparation of Release note | 1d | 2013-01-17 | 2013-01-18 |  |  |  | 2008-10-15 | 2008-10-15 | 1d | 1.33d |  | start no earlier than 2004-03-31 | SA: Richard | 8h |  | Task | Engineering Activity |
| 92 | 2.6.2 | Release program units | 1.6d | 2013-01-17 | 2013-01-21 |  |  |  | 2008-10-16 | 2008-10-16 | 1d | 0.73d |  | start no earlier than 2008-10-16 | SA: Richard; SD1: KaiYue [50%]; SD2:紘杰 [50%] | 16h |  | Task | Engineering Activity |
| 93 | 2.7 | **Acceptance Test** | 87.5d | 2012-09-19 A | 2013-01-18 |  | 5% | 83.45d | 2008-10-17 | 2008-10-29 | 9d | 1d | 0d |  |  | 1200.67h | 90h | Phase |  |
| 94 | 2.3.4 | **Provide onsite support to the Acceptance Testing** | 87.5d | 2012-09-19 A | 2013-01-18 |  | 5% | 83.33d | 2008-09-08 | 2008-09-28 | 17d | 0d |  |  | SA: Richard; Customer: Jason [50%] | 1184.67h | 90h | Phase |  |
| 95 | 3.5.1.1 | **Unit Test - Module 基本資料查詢** | 11d | 2012-09-19 A | 2012-10-04 |  | 50% | 5.5d | 2008-09-16 | 2008-09-25 | 8d | 96.17d |  |  |  | 70.67h | 40h | Activity |  |
| 96 | 3.5.1.1.1 | Unit Test of Module 基本資料查詢 | 5d | 2012-09-19 A | 2012-09-26 A | 45 | 100% |  | 2008-09-16 | 2008-09-24 | 7d |  |  | start no earlier than 2004-03-31 | SD1: KaiYue [50%]; Customer: Jason [50%] | 40h | 40h | Task | Engineering Activity |
| 97 | 3.5.1.1.2 | Review & Verify on Module 基本資料查詢 | 5d | 2012-09-27 | 2012-10-04 | 46 |  |  | 2008-09-26 | 2008-09-27 | 2d | 96.17d | 0d | finish no earlier than 2008-09-27 | SD1: KaiYue [50%]; Customer: Jason [50%] | 30.67h |  | Task | Rework |
| 98 | 3.5.1.2 | **Unit Test - Module 料號主檔 查詢** | 10d | 2012-11-05 | 2012-11-19 |  |  |  | 2008-09-23 | 2008-09-27 | 5d | 55.77d |  |  |  | 64h |  | Activity |  |
| 99 | 3.5.1.2.1 | Unit Test of Module 料號主檔/總覽 查詢 | 5d | 2012-11-05 | 2012-11-12 | 49 |  |  | 2008-09-23 | 2008-09-26 | 4d | 55.77d | 0d | start no earlier than 2004-03-31 | SD2:紘杰 [50%]; Customer: Jason [50%] | 40h |  | Task | Engineering Activity |
| 100 | 3.5.1.2.2 | Review & Rework & Verify on Module 料號主檔/總覽 查詢 | 3d | 2012-11-14 | 2012-11-19 | 54 |  |  | 2008-09-28 | 2008-09-28 | 1d | 55.77d | 0d | start no earlier than 2004-03-31 | Customer: Jason [50%]; SD2:紘杰 [50%] | 24h |  | Task | Rework |
| 101 | 2.3.4.1 | **Unit Test - Module 系統登錄 + 首頁** | 8d | 2012-11-02 | 2012-11-13 |  |  |  | 2008-09-08 | 2008-09-15 | 6d | 48d |  |  |  |  |  | Activity |  |
| 102 | 2.3.4.1.1 | Unit Test of Module 系統登錄 + 首頁 | 5d | 2012-11-02 | 2012-11-08 | 57 |  |  | 2008-09-08 | 2008-09-12 | 5d | 48d | 0d | start no earlier than 2004-03-31 |  |  |  | Task | Engineering Activity |
| 103 | 3.5.1.3.2 | Review & Verify on Module 系統登錄 + 首頁 | 2d | 2012-11-12 | 2012-11-13 | 58 |  |  | 2008-09-16 | 2008-09-17 | 2d | 48d | 0d | start no earlier than 2004-03-31 |  |  |  | Task | Rework |
| 104 | 2.3.4.7 | **Unit Test - Module 系統維護** | 13d | 2012-11-29 | 2012-12-17 |  |  |  | 2008-09-16 | 2008-09-25 | 8d | 23d |  |  |  |  |  | Activity |  |
| 105 | 2.3.4.7.1 | Unit Test of Module 系統維護 | 10d | 2012-11-29 | 2012-12-12 | 61 |  |  | 2008-09-16 | 2008-09-24 | 7d | 23d | 0d | start no earlier than 2004-03-31 |  |  |  | Task | Engineering Activity |
| 106 | 2.3.4.8 | Review & Verify on Module 系統維護 | 2d | 2012-12-14 | 2012-12-17 | 62 |  |  | 2008-09-26 | 2008-09-27 | 2d | 23d | 0d | finish no earlier than 2008-09-27 |  |  |  | Task | Rework |

Notes:
- 83: Test environment includes hardware, software, communication etc
- 84: Conduct integration testing as per Integration test plan and test cases prepared for this purpose
- 85: Fix integration testing defects
- 87: Test environment includes hardware, software, communication etc
- 88: Conduct system testing as per the System Test Plan and Test Cases designed for this purpose
- 89: Fix System testing defects
- 91: Prepare a release note which consists work products to be delivered, configuration management issues etc. Use standard template for the same.
- 92: Release all program units pertaining to this stage as per Release note
- 94: Provide complete support to the acceptance testing as per the contractual agreement
- 95: 1.員工資料 / 2.供應商 / 3.系統開立帳號與權限清單 / 4.部門已開立帳號與權限清單 / 5.開立帳號現況總覽 / 6.零件主檔 / 7.零件主檔 for MC
- 96: Develop detailed programs by using designs and other standards
- 97: Fix code review defects and other best practices suggested by the peers / reviewers
- 98: 92階料號 主檔[by itemnum] / 92階料號 主檔(for MC)[by itemnum] / 92階料號 總覽[by deptcode] / 93階料號 主檔[by itemnum] / 93階料號 總覽[by deptcode] / 94階料號 主檔[by itemnum] / 94階料號 主檔(for MC)[by itemnum] / 94階料號 總覽[by deptcode] / 94階料號 總覽 For MC[by deptcode ](?:確認是否可以整併) / 查詢-94階料號 控管量 for_pur / 部門內控管料號 / 料號與替代料號對應總覽
- 99: Develop detailed programs by using designs and other standards
- 100: Fix code review defects and other best practices suggested by the peers / reviewers
- 102: Develop detailed programs by using designs and other standards
- 103: Fix code review defects and other best practices suggested by the peers / reviewers
- 104: 1.公司(CMO,CMOCHINA,CMECHINA) / [依ERP 公司帳本來分類; D:ITEAM教材00.Password&TNSERP_OU_NO_mappingtable.xls] / 1.1 倉庫 / 1.2 呆滯天數參數設定 / 2.類別 / 3.貨幣 / 4.匯率 / 5.簽核流程 / 5.2工作流程管理 / 5.3工作流程設計(BIZ Flow) / 5.4動作 / 5.5角色 / 5.6聯絡範本 / 6.時效管理機制(alert mail & trigger even) / 7.授權 / 7.1安全群組(group) / 7.2使用者(maxuser) / 8.部門廠區對應維護與查詢 / 9.消滅部門與其主管查詢(維護)表 / 10.每日資料拋轉機制Monitor / 11.流程內申請單狀態變更作業 / 12.公佈欄
- 105: Develop detailed programs by using designs and other standards
- 106: Fix code review defects and other best practices suggested by the peers / reviewers

| ID | WBS | Task | Type | Duration | Start | Finish | Predecessors | Baseline start | Baseline finish | Baseline duration | Total slack | Free slack | Constraint | Resources | Work | Text1 | Text2 | Text8 |
| --- | --- | --- | --- | --- | --- | --- | --- | --- | --- | --- | --- | --- | --- | --- | --- | --- | --- | --- |
| 107 | 3.5.1.5 | **Unit Test - Module 歷史查詢** |  | 18d | 2012-11-22 | 2012-12-17 |  | 2008-09-23 | 2008-09-27 | 5d | 24d |  |  |  |  | Activity |  |  |
| 108 | 3.5.1.5.1 | Unit Test of Module 歷史查詢 |  | 15d | 2012-11-22 | 2012-12-12 | 65 | 2008-09-23 | 2008-09-26 | 4d | 24d | 0d | start no earlier than 2004-03-31 |  |  | Task | Engineering Activity |  |
| 109 | 3.5.1.5.2 | Review & Verify on Module 歷史查詢 |  | 2d | 2012-12-14 | 2012-12-17 | 66 | 2008-09-28 | 2008-09-28 | 1d | 24d | 0d | start no earlier than 2004-03-31 |  |  | Task | Rework |  |
| 110 | 2.3.4.3 | **Unit Test - Module 申請作業** |  | 19d | 2012-12-10 | 2013-01-03 |  | 2008-09-08 | 2008-09-22 | 11d | 10d |  |  |  |  | Activity |  |  |
| 111 | 2.3.4.3.1 | Unit Test of Module 申請作業 |  | 15d | 2012-12-10 | 2012-12-28 | 69 | 2008-09-08 | 2008-09-19 | 10d | 10d | 0d | start no earlier than 2004-03-31 |  |  | Task | Engineering Activity |  |
| 112 | 3.5.1.6.2 | Review & Verify on Module 申請作業 |  | 2d | 2013-01-02 | 2013-01-03 | 70 | 2008-09-23 | 2008-09-24 | 2d | 10d | 0d | start no earlier than 2004-03-31 |  |  | Task | Rework |  |
| 113 | 2.3.4.5 | **Unit Test - Module 審核作業** |  | 18d | 2012-12-26 | 2013-01-18 |  | 2008-09-23 | 2008-09-27 | 5d | 0d |  |  |  |  | Activity |  |  |
| 114 | 2.3.4.5.1 | Unit Test of Module 審核作業 |  | 15d | 2012-12-26 | 2013-01-15 | 73 | 2008-09-23 | 2008-09-26 | 4d | 0d |  | start no earlier than 2004-03-31 |  |  | Task | Engineering Activity |  |
| 115 | 2.3.4.6 | Review & Verify on Module 審核作業 |  | 2d | 2013-01-17 | 2013-01-18 | 74 | 2008-09-28 | 2008-09-28 | 1d | 0d |  | start no earlier than 2004-03-31 |  |  | Task | Rework |  |
| 116 | 3.5.1.8 | **Unit Test - Module 查詢/重訂購- 控管量** |  | 18d | 2012-12-11 | 2013-01-03 |  | 2008-09-23 | 2008-09-27 | 5d | 0.73d |  |  |  |  | Activity |  |  |
| 117 | 3.5.1.8.1 | Unit Test of Module查詢/重訂購- 控管量 |  | 15d | 2012-12-11 | 2012-12-31 | 77 | 2008-09-23 | 2008-09-26 | 4d | 0.73d | 0d | start no earlier than 2004-03-31 |  |  | Task | Engineering Activity |  |
| 118 | 3.5.1.8.2 | Review & Verify on Module 查詢/重訂購- 控管量 |  | 2d | 2013-01-02 | 2013-01-03 | 78 | 2008-09-28 | 2008-09-28 | 1d | 0.73d | 0d | start no earlier than 2004-03-31 |  |  | Task | Rework |  |
| 120 | 2.7.3.2 | Obtain acceptance test report |  | 1d | 2013-01-14 | 2013-01-15 | 82 | 2008-10-21 | 2008-10-22 | 2d | 2.67d | 0d | start no earlier than 2004-03-31 |  |  | Task | Project Mgmt. |  |
| 121 | 2.7.3.3 | Re-work and close post release defects |  | 1d | 2013-01-15 | 2013-01-16 | 120 | 2008-10-23 | 2008-10-27 | 3d | 2.67d | 0d | start no earlier than 2004-03-31 |  |  | Task | Rework |  |
| 122 | 2.7.3.4 | Final delevery and Installation |  | 1d | 2013-01-16 | 2013-01-17 | 121 | 2008-10-28 | 2008-10-29 | 2d | 2.67d |  | start no earlier than 2008-10-28 | SA: Richard; Customer: Jason | 16h | Task | Project Mgmt. |  |
| 123 | 2.8 | **Project Closure** |  | 0d | 2013-01-18 | 2013-01-18 | 93 | 2008-10-30 | 2008-11-03 | 3d | 1d |  |  |  |  | Phase |  |  |
| 124 | 2.8.1 | Assess Customer Satisfaction | milestone | 0d | 2013-01-18 | 2013-01-18 |  | 2008-10-30 | 2008-10-30 | 1d | 1d | 0d | start no earlier than 2004-03-31 | PM: Richard |  | Task | Project Mgmt. | key:255 |
| 125 | 2.8.2 | Summarize Project Results and Lessons Learned | milestone | 0d | 2013-01-18 | 2013-01-18 |  | 2008-10-30 | 2008-10-30 | 1d | 1d |  | start no earlier than 2004-03-31 | PM: Richard [50%]; SA: Richard [50%] |  | Task | Project Mgmt. | key:256 |
| 126 | 2.8.3 | Review and Recognize Team Performance | milestone | 0d | 2013-01-18 | 2013-01-18 | 124 | 2008-10-31 | 2008-10-31 | 1d | 1d |  |  | PM: Richard [50%] |  | Task | Project Mgmt. | key:257 |
| 127 | 2.8.5 | Project Closure Meeting | milestone | 0d | 2013-01-18 | 2013-01-18 |  | 2008-11-03 | 2008-11-03 | 1d | 1d |  | start no earlier than 2008-10-31 | SV: Jack; Customer: Jason; PM: Richard |  | Task | Project Mgmt. |  |
| 128 | 2.8.6 | Close Out the Project Records | milestone | 0d | 2013-01-18 | 2013-01-18 |  | 2008-11-03 | 2008-11-03 | 1d | 1d |  | start no earlier than 2008-11-03 | PM: Richard |  | Task | Project Mgmt. | key:259 |

Notes:
- 107: 92階 料號新增/ 庫存異動 / 92階 非週期性需求 / 93階 料號新增/ 庫存異動 / 93階 訂製品需求 / 94階 料號新增/ 庫存異動 / 94階 保養需求 / 料號規格異動
- 108: Develop detailed programs by using designs and other standards
- 109: Fix code review defects and other best practices suggested by the peers / reviewers
- 110: 92階 料號新增/ 庫存異動 / 92階 非週期性需求 / 93階 料號新增/ 庫存異動 / 93階 訂製品需求 / 94階 料號新增/ 庫存異動 / 94階 保養需求 / 料號規格異動
- 111: Develop detailed programs by using designs and other standards
- 112: Fix code review defects and other best practices suggested by the peers / reviewers
- 113: 92階 料號新增/ 庫存異動 / 92階 非週期性需求 / 93階 料號新增/ 庫存異動 / 93階 訂製品需求 / 94階 料號新增/ 庫存異動 / 94階 保養需求 / 料號規格異動 / 審核完畢之(待開立PR)申請單
- 114: Develop detailed programs by using designs and other standards
- 115: Fix code review defects and other best practices suggested by the peers / reviewers
- 116: 查詢/重訂購- 92階料號 控管量 [ 未啟用:重訂購] / 查詢/重訂購-93階料號 控管量[ 未啟用:重訂購] / 查詢/重訂購-94階料號 控管量[已啟用:重訂購]
- 117: Develop detailed programs by using designs and other standards
- 118: Fix code review defects and other best practices suggested by the peers / reviewers
- 124: Document the overall satisfaction with the project.
- 125: Work with the project team to capture relevant experience and lessons learned for the benefit of future projects.
- 126: Complete performance reviews for each team member, recognize efforts and accomplishments, and celebrate success.
- 128: Update and archive project documentation and make sure that all close out conditions have been met.
