# MPP_Template

Schedule from MS Project, 2012-07-03 to 2013-03-01, A marks actual dates.
Hewlett-Packard

## Calendars

- Standard: Mon-Fri 08:00-12:00, 13:00-17:00; Sat-Sun off.

## Resources

| Resource |
| --- |
| PM: Richard |
| SD4:春呈 |
| SD2:紘杰 |
| SD3:Simon |
| SE3 |
| Customer: Jason |
| SV: Jack |
| SA: Richard |
| SD1: KaiYue |

## Schedule

| ID | WBS | Task | Duration | Start | Finish | Predecessors | Complete | Remaining | Baseline start | Baseline finish | Baseline duration | Total slack | Free slack | Constraint | Resources | Work | Actual work | Text1 | Text8 | Text2 |
| --- | --- | --- | --- | --- | --- | --- | --- | --- | --- | --- | --- | --- | --- | --- | --- | --- | --- | --- | --- | --- |
| 1 | 1 | MRO(CSP)-Consumable_Spare_Parts_Material_Control System | 106d | 2012-07-03 | 2012-11-27 |  |  |  | 2008-08-12 | 2008-12-26 | 101d | 68d |  | finish no earlier than 2012-11-27 |  |  |  | Project |  |  |
| 2 | 2 | **Engineering Activities** | 49d | 2012-07-03 A | 2012-09-07 A |  | 100% |  | 2008-07-28 | 2008-12-26 | 112d |  |  |  |  | 184h | 184h | Lifecycle |  |  |
| 3 | 2.1 | **Project Initiation** | 49d | 2012-07-03 A | 2012-09-07 A |  | 100% |  | 2008-07-28 | 2008-08-01 | 5d |  |  |  |  | 184h | 184h | Phase |  |  |
| 4 | 2.1.1 | **Define Scope** | 5d | 2012-07-03 A | 2012-07-09 A |  | 100% |  | 2008-07-28 | 2008-08-01 | 5d |  |  |  |  | 16h | 16h | Activity | key:8 |  |
| 5 | 2.1.1.1 | Define project Scope | 5d | 2012-07-03 A | 2012-07-09 A |  | 100% |  | 2008-07-28 | 2008-08-01 | 5d |  |  | start no earlier than 2012-07-03 | PM: Richard [10%]; SA: Richard [10%] | 8h | 8h | Task | key:12 | Project Mgmt. |
| 6 | 2.1.1.2 | Develop Work Breakdown Structure | 5d | 2012-07-03 A | 2012-07-09 A |  | 100% |  | 2008-07-28 | 2008-08-01 | 5d |  |  | start no earlier than 2012-07-03 | PM: Richard [10%]; SA: Richard [10%] | 8h | 8h | Task | key:14 | Project Mgmt. |
| 7 | 2.1.2 | **Preparation** | 49d | 2012-07-03 A | 2012-09-07 A |  | 100% |  | 2008-07-28 | 2008-08-01 | 5d |  |  |  |  | 168h | 168h | Activity |  |  |
| 8 | 2.1.2.3 | Set Up Project Management Tools | 2d | 2012-07-03 A | 2012-07-04 A |  | 100% |  | 2008-07-28 | 2008-08-01 | 5d |  |  | start no earlier than 2012-07-03 | SA: Richard [50%] | 8h | 8h | Task | key:55 | Project Mgmt. |
| 9 | 2.1.2.4 | Set Up Project develop Tools | 10d | 2012-08-27 A | 2012-09-07 A |  | 100% |  | 2008-07-28 | 2008-08-01 | 5d |  |  | start no earlier than 2012-08-27 | SD1: KaiYue; SD4:春呈; SD2:紘杰 [50%]; SD3:Simon [50%] | 160h | 160h | Task |  | Project Mgmt. |
| 10 | 2.2 | **Project Kickoff** | 127d? | 2012-09-06 A | 2013-03-01 |  | 22% | 99.49d? | 2008-08-12 | 2008-08-13 | 1.5d | 0d |  |  |  | 5119.09h | 1290.14h | Activity |  |  |
| 11 | 2.2.2 | Project Kickoff Meeting | 0.5d | 2012-09-06 | 2012-09-06 |  |  |  | 2008-08-13 | 2008-08-13 | 0.5d | 2d | 0d | start no earlier than 2012-09-06 | Customer: Jason; SV: Jack; PM: Richard | 10h |  | Task |  | Project Mgmt. |
| 13 | 2.3 | **MRO(CSP) New Modules** | 120.5d? | 2012-09-06 A | 2013-02-21 | 11 | 27% | 87.46d? | 2008-08-11 | 2008-09-30 | 39d | 6d |  |  |  | 3448.42h | 986.17h | SubProject |  |  |
| 14 | 2.3.1 | **Requirements, System and Acceptance Test Planning** | 85.5d? | 2012-09-06 A | 2013-01-03 |  | 36% | 54.69d? | 2008-08-11 | 2008-08-22 | 10d | 41d |  |  |  | 1662h | 766.17h | Phase |  | Org Audit |
| 15 | 2.3.1.1 | **Requirements Engineering** | 85.5d? | 2012-09-06 A | 2013-01-03 |  | 36% | 54.69d? | 2008-08-11 | 2008-08-22 | 10d | 41d |  |  |  | 1662h | 766.17h | Activity | key:66 |  |
| 16 | 2.3.1.1.1 | **Define Requirements & prepare SRS** | 85.5d? | 2012-09-06 A | 2013-01-03 |  | 36% | 54.69d? | 2008-08-11 | 2008-08-19 | 7d | 41d |  |  |  | 1662h | 766.17h | Task | key:67 | Engineering Activity |
| 17 | 3.2.1.1.1.1 | **基本資料 查詢(BASIC)** | 4d? | 2012-09-06 A | 2012-09-12 |  | 50% | 2d? |  |  |  | 31.27d | 0d |  | SA: Richard; SD2:紘杰; SD1: KaiYue; SD3:Simon; SD4:春呈 | 152h | 72h |  |  |  |
| 18 | 3.2.1.1.1.1.1 | 員工資料 | 1d? | 2012-09-06 | 2012-09-07 |  |  |  |  |  |  | 7.5d | 0d |  |  |  |  |  |  |  |
| 19 | 3.2.1.1.1.1.2 | 供應商資料 | 1d? | 2012-09-07 | 2012-09-10 | 18 |  |  |  |  |  | 7.5d |  |  |  |  |  |  |  |  |
| 20 | 3.2.1.1.1.1.3 | Review & Rework SRS | 2d | 2012-09-10 A | 2012-09-12 A | 19 | 100% |  |  |  |  |  |  | start no earlier than 2012-07-06 | SA: Richard; SD1: KaiYue [50%] | 24h | 24h |  |  |  |
| 21 | 3.2.1.1.1.2 | **料號主檔 查詢(ITEMLIST)** | 35.5d | 2012-09-12 A | 2012-10-31 | 17 | 88% | 4.23d |  |  |  | 0d |  |  | SA: Richard; SD2:紘杰 [50%] | 766h | 671.28h |  |  |  |
| 22 | 3.2.1.1.1.2.1 | 料號 主檔 | 30d | 2012-09-12 A | 2012-10-24 A |  | 100% |  |  |  |  |  |  |  | SA: Richard | 240h | 240h |  |  |  |
| 23 | 3.2.1.1.1.2.2 | 料號 總覽 | 4d | 2012-10-16 A | 2012-10-19 |  | 50% | 2d |  |  |  | 6d | 0d | start no earlier than 2012-10-16 | SA: Richard | 32h | 16h |  |  |  |
| 24 | 3.2.1.1.1.2.3 | 部門內控管料號 | 4d | 2012-10-22 A | 2012-10-25 | 23 | 50% | 2d |  |  |  | 4d | 0d |  | SA: Richard | 32h | 16h |  |  |  |
| 25 | 3.2.1.1.1.2.4 | 料號與替代料號對應總覽 | 3d | 2012-10-26 A | 2012-10-30 A | 24 | 100% |  |  |  |  |  |  |  | SA: Richard | 24h | 24h |  |  |  |
| 26 | 3.2.1.1.1.2.5 | Review & Rework SRS | 1d | 2012-10-31 | 2012-10-31 | 25 |  |  |  |  |  | 0d |  | start no earlier than 2012-07-06 | SA: Richard; SD2:紘杰 [50%] | 12h |  |  |  |  |

Notes:
- 15: Define the system requirements.
- 16: Prepare necessary inputs for SRS

| ID | WBS | Task | Type | Duration | Start | Finish | Predecessors | Complete | Remaining | Baseline start | Baseline finish | Baseline duration | Total slack | Free slack | Constraint | Resources | Work | Actual work | Text1 | Text2 | Text8 |
| --- | --- | --- | --- | --- | --- | --- | --- | --- | --- | --- | --- | --- | --- | --- | --- | --- | --- | --- | --- | --- | --- |
| 27 | 3.2.1.1.1.3 | **系統登錄(LOGIN)&主頁(MP)** |  | 2d | 2012-12-27 | 2012-12-28 | 33 |  |  |  |  |  | 6d | 0d |  |  |  |  |  |  |  |
| 28 | 3.2.1.1.1.3.1 | Review & Rework SRS |  | 2d | 2012-12-27 | 2012-12-28 |  |  |  |  |  |  | 6d | 0d | start no earlier than 2012-07-06 |  |  |  |  |  |  |
| 29 | 3.2.1.1.1.4 | **系統維護(SYS)** |  | 2d | 2012-12-31 | 2013-01-01 | 27 |  |  |  |  |  | 6d | 0d |  |  |  |  |  |  |  |
| 30 | 3.2.1.1.1.4.1 | Review & Rework SRS |  | 2d | 2012-12-31 | 2013-01-01 |  |  |  |  |  |  | 6d | 0d | start no earlier than 2012-07-06 |  |  |  |  |  |  |
| 31 | 3.2.1.1.1.5 | **歷史查詢(HIS)** |  | 2d | 2013-01-02 | 2013-01-03 | 29 |  |  |  |  |  | 12d |  |  |  |  |  |  |  |  |
| 32 | 3.2.1.1.1.5.1 | Review & Rework SRS |  | 2d | 2013-01-02 | 2013-01-03 |  |  |  |  |  |  | 12d | 0d | start no earlier than 2012-07-06 |  |  |  |  |  |  |
| 33 | 3.2.1.1.1.6 | **申請作業(APPL)** |  | 40d | 2012-11-01 A | 2012-12-26 | 21 | 2% | 39.26d |  |  |  | 0d |  |  | SA: Richard | 744h | 22.89h |  |  |  |
| 34 | 3.2.1.1.1.6.1 | **料號新增/規格異動** |  | 28d | 2012-11-01 A | 2012-12-10 |  | 4% | 26.88d |  |  |  | 0d |  |  | SA: Richard | 424h | 16.96h |  |  |  |
| 35 | 3.2.1.1.1.6.1.1 | 分類/屬性 設定 |  | 12d | 2012-11-01 | 2012-11-22 |  |  |  |  |  |  | 0d |  |  | SA: Richard | 96h |  |  |  |  |
| 36 | 3.2.1.1.1.6.1.2 | 料號新增 |  | 5d | 2012-11-13 A | 2012-11-28 | 35 | 20% | 4d |  |  |  | 0d |  |  | SA: Richard | 40h | 8h |  |  |  |
| 37 | 3.2.1.1.1.6.1.3 | 規格異動 |  | 8d | 2012-11-29 | 2012-12-10 | 36 |  |  |  |  |  | 0d |  |  | SA: Richard | 64h |  |  |  |  |
| 38 | 3.2.1.1.1.6.2 | 92階 料號 庫存異動 |  | 6d | 2012-12-11 | 2012-12-18 | 37 |  |  |  |  |  | 0d |  |  |  |  |  |  |  |  |
| 39 | 3.2.1.1.1.6.3 | 93階 料號 庫存異動 |  | 6d | 2012-12-11 | 2012-12-18 | 34 |  |  |  |  |  | 6d |  |  |  |  |  |  |  |  |
| 40 | 3.2.1.1.1.6.4 | 92階 料號 非週期需求 |  | 6d | 2012-12-19 | 2012-12-26 | 38 |  |  |  |  |  | 0d |  |  |  |  |  |  |  |  |
| 41 | 3.2.1.1.1.6.5 | 93階 訂製品 |  | 6d | 2012-12-19 | 2012-12-26 | 38 |  |  |  |  |  | 0d |  |  |  |  |  |  |  |  |
| 42 | 3.2.1.1.1.6.6 | Review & Rework SRS |  | 5d | 2012-11-01 | 2012-11-07 |  |  |  |  |  |  | 35d |  | start no earlier than 2012-07-06 |  |  |  |  |  |  |
| 43 | 3.2.1.1.1.7 | **審核作業(REV)** |  | 5d | 2012-12-27 | 2013-01-02 | 33 |  |  |  |  |  | 0d |  |  |  |  |  |  |  |  |
| 44 | 3.2.1.1.1.7.1 | Review & Rework SRS |  | 5d | 2012-12-27 | 2013-01-02 |  |  |  |  |  |  | 0d |  | start no earlier than 2012-07-06 |  |  |  |  |  |  |
| 45 | 3.2.1.1.1.8 | **查詢/重訂購- 控管量(ROP)** |  | 0d | 2013-01-02 | 2013-01-02 | 43 |  |  |  |  |  | 42d |  |  |  |  |  |  |  |  |
| 46 | 2.3.1.1.3 | Review & Rework SRS | milestone | 0d | 2013-01-02 | 2013-01-02 |  |  |  | 2008-08-20 | 2008-08-21 | 2d | 42d | 0d | finish no earlier than 2008-08-21 |  |  |  | Task | Review | key:69 |
| 47 | 2.3.4 | **Coding & Unit Test** |  | 116.5d | 2012-09-12 A | 2013-02-21 |  | 22% | 91.19d | 2008-09-08 | 2008-09-28 | 17d | 6d |  |  |  | 1786.42h | 220h | Phase |  |  |
| 48 | 3.2.2.1 | **Coding & Unit Test - Module 基本資料查詢** |  | 17d | 2012-09-12 A | 2012-10-05 |  | 86% | 2.43d | 2008-09-16 | 2008-09-25 | 8d | 105.5d |  |  |  | 56h | 48h | Activity |  |  |
| 49 | 3.2.2.1.1 | Coding & Unit Test of Module 基本資料查詢 |  | 5d | 2012-09-12 A | 2012-09-19 A | 20 | 100% |  | 2008-09-16 | 2008-09-24 | 7d |  |  | start no earlier than 2004-03-31 | SD1: KaiYue [50%]; SD2:紘杰 [50%] | 40h | 40h | Task | Engineering Activity |  |
| 50 | 3.2.2.1.2 | Code Review of Module 基本資料查詢 |  | 1d | 2012-09-26 A | 2012-09-27 A | 102 | 100% |  | 2008-09-25 | 2008-09-25 | 1d |  |  | start no earlier than 2004-03-31 | SD1: KaiYue [50%]; SD2:紘杰 [50%] | 8h | 8h | Task | Review |  |
| 51 | 3.2.2.1.3 | Review & Rework & Verify on Module 基本資料查詢 |  | 1d | 2012-10-04 | 2012-10-05 | 103 |  |  | 2008-09-26 | 2008-09-27 | 2d | 105.5d |  | finish no earlier than 2008-09-27 | SD1: KaiYue [50%]; SD2:紘杰 [50%] | 8h |  | Task | Rework |  |

Notes:
- 46: Conduct a forma review for SRS
- 48: 1.員工資料 / 2.供應商 / 3.系統開立帳號與權限清單 / 4.部門已開立帳號與權限清單 / 5.開立帳號現況總覽 / 6.零件主檔 / 7.零件主檔 for MC
- 49: Develop detailed programs by using designs and other standards
- 50: Identify peers and conduct code reviews by using standard checklists and other standards
- 51: Fix code review defects and other best practices suggested by the peers / reviewers

| ID | WBS | Task | Duration | Start | Finish | Predecessors | Complete | Remaining | Baseline start | Baseline finish | Baseline duration | Total slack | Free slack | Constraint | Resources | Work | Actual work | Text1 | Text2 |
| --- | --- | --- | --- | --- | --- | --- | --- | --- | --- | --- | --- | --- | --- | --- | --- | --- | --- | --- | --- |
| 52 | 3.2.2.2 | **Coding & Unit Test - Module 料號主檔 查詢** | 22d | 2012-10-22 A | 2012-11-20 |  | 65% | 7.72d | 2008-09-23 | 2008-09-27 | 5d | 73d |  |  |  | 304h | 172h | Activity |  |
| 53 | 3.2.2.2.1 | 料號 主檔 | 13d | 2012-10-24 A | 2012-11-12 A | 22 | 100% |  |  |  |  |  |  |  | SD2:紘杰 [50%] | 52h | 52h |  |  |
| 54 | 3.2.2.2.2 | 料號 總覽 | 12d | 2012-10-22 A | 2012-11-06 | 23 | 50% | 6d |  |  |  | 78d | 0d |  | SA: Richard | 96h | 48h |  |  |
| 55 | 3.2.2.2.3 | 部門內控管料號 | 13d | 2012-10-26 A | 2012-11-13 | 24 | 50% | 6.5d |  |  |  | 73d | 0d |  | SA: Richard | 104h | 52h |  |  |
| 56 | 3.2.2.2.4 | 料號與替代料號對應總覽 | 5d | 2012-10-31 A | 2012-11-06 A | 25 | 100% |  |  |  |  |  |  |  | SD1: KaiYue [50%] | 20h | 20h |  |  |
| 57 | 3.2.2.2.5 | Code Review of Module 料號主檔/總覽 查詢 | 2d | 2012-11-07 | 2012-11-08 | 56 |  |  | 2008-09-27 | 2008-09-27 | 1d | 81d |  | start no earlier than 2004-03-31 | SD2:紘杰 [50%]; SD1: KaiYue [50%] | 16h |  | Task | Review |
| 58 | 3.2.2.2.6 | Review & Rework & Verify on Module 料號主檔/總覽 查詢 | 2d | 2012-11-19 | 2012-11-20 | 109 |  |  | 2008-09-28 | 2008-09-28 | 1d | 73d |  | start no earlier than 2004-03-31 | SD1: KaiYue [50%]; SD2:紘杰 [50%] | 16h |  | Task | Rework |
| 59 | 2.3.4.1 | **Coding & Unit - Module 系統登錄 + 首頁** | 14d | 2012-12-31 | 2013-01-17 |  |  |  | 2008-09-08 | 2008-09-15 | 6d | 31d |  |  |  | 121.25h |  | Activity |  |
| 60 | 2.3.4.1.1 | Coding & Unit Test of Module 系統登錄 + 首頁 | 5d | 2012-12-31 | 2013-01-04 | 28 |  |  | 2008-09-08 | 2008-09-12 | 5d | 31d | 0d | start no earlier than 2004-03-31 | SD1: KaiYue; SD2:紘杰 | 80h |  | Task | Engineering Activity |
| 61 | 2.3.4.1.2 | Code Review of Module 系統登錄 + 首頁 | 1d | 2013-01-14 | 2013-01-14 | 111 |  |  | 2008-09-15 | 2008-09-15 | 1d | 31d | 0d | start no earlier than 2004-03-31 | SD1: KaiYue; SA: Richard; SD2:紘杰 | 24h |  | Task | Review |
| 62 | 3.2.2.3.3 | Review & Rework & Verify on Module 系統登錄 + 首頁 | 1d | 2013-01-17 | 2013-01-17 | 112 |  |  | 2008-09-16 | 2008-09-17 | 2d | 31d |  | start no earlier than 2004-03-31 | SD1: KaiYue; SA: Richard; SD2:紘杰 | 17.25h |  | Task | Rework |
| 63 | 2.3.4.7 | **Coding & Unit Test - Module 系統維護** | 37d | 2013-01-02 | 2013-02-21 |  |  |  | 2008-09-16 | 2008-09-25 | 8d | 6d |  |  |  | 400h |  | Activity |  |
| 64 | 2.3.4.7.1 | Coding & Unit Test of Module 系統維護 | 22d | 2013-01-02 | 2013-01-31 | 30 |  |  | 2008-09-16 | 2008-09-24 | 7d | 6d | 0d | start no earlier than 2004-03-31 | SD1: KaiYue; SD2:紘杰 | 352h |  | Task | Engineering Activity |
| 65 | 2.3.4.7.2 | Code Review of Module 系統維護 | 1d | 2013-02-15 | 2013-02-15 | 114 |  |  | 2008-09-25 | 2008-09-25 | 1d | 6d | 0d | start no earlier than 2004-03-31 | SD1: KaiYue; SD2:紘杰 | 16h |  | Task | Review |
| 66 | 2.3.4.8 | Review & Rework & Verify on Module 系統維護 | 2d | 2013-02-20 | 2013-02-21 | 115 |  |  | 2008-09-26 | 2008-09-27 | 2d | 6d |  | finish no earlier than 2008-09-27 | SD1: KaiYue; SD2:紘杰 | 32h |  | Task | Rework |
| 67 | 3.2.2.5 | **Coding & Unit Test - Module 歷史查詢** | 29d | 2013-01-04 | 2013-02-13 |  |  |  | 2008-09-23 | 2008-09-27 | 5d | 12d |  |  |  | 272h |  | Activity |  |
| 68 | 3.2.2.5.1 | Coding & Unit Test of Module 歷史查詢 | 15d | 2013-01-04 | 2013-01-24 | 32 |  |  | 2008-09-23 | 2008-09-26 | 4d | 12d | 0d | start no earlier than 2004-03-31 | SD3:Simon; SD1: KaiYue | 240h |  | Task | Engineering Activity |
| 69 | 3.2.2.5.2 | Code Review of Module 歷史查詢 | 1d | 2013-02-08 | 2013-02-08 | 117 |  |  | 2008-09-27 | 2008-09-27 | 1d | 12d | 0d |  | SD1: KaiYue [50%]; SD3:Simon [50%] | 8h |  | Task | Review |
| 70 | 3.2.2.5.3 | Review & Rework & Verify on Module 歷史查詢 | 1d | 2013-02-13 | 2013-02-13 | 118 |  |  | 2008-09-28 | 2008-09-28 | 1d | 12d |  | start no earlier than 2004-03-31 | SD1: KaiYue; SA: Richard; SD3:Simon | 24h |  | Task | Rework |
| 71 | 2.3.4.3.1 | **Coding & Unit Test of Module 申請作業** | 24d | 2012-12-11 | 2013-01-11 |  |  |  | 2008-09-08 | 2008-09-19 | 10d | 25d | 0d |  | SD3:Simon; SD1: KaiYue | 417.18h |  | Task | Engineering Activity |
| 72 | 3.2.2.6.1 | 料號新增/規格異動 | 10d | 2012-12-11 | 2012-12-24 | 34 |  |  |  |  |  | 25d | 0d |  |  |  |  |  |  |
| 73 | 3.2.2.6.2 | 92階 料號 庫存異動 | 10d | 2012-12-25 | 2013-01-07 | 72 |  |  |  |  |  | 29d |  |  |  |  |  |  |  |
| 74 | 3.2.2.6.3 | 93階 料號 庫存異動 | 10d | 2012-12-25 | 2013-01-07 | 72 |  |  |  |  |  | 29d |  |  |  |  |  |  |  |
| 75 | 3.2.2.6.4 | 92階 料號 非週期需求 | 10d | 2012-12-25 | 2013-01-07 | 72 |  |  |  |  |  | 29d |  |  |  |  |  |  |  |
| 76 | 2.3.4.3.2 | 93階 訂製品 | 10d | 2012-12-25 | 2013-01-07 | 72 |  |  | 2008-09-22 | 2008-09-22 | 1d | 25d | 0d |  |  |  |  | Task | Review |
| 77 | 3.2.2.6.6 | Review & Rework & Verify on Module 申請作業 | 2d | 2013-01-10 | 2013-01-11 | 121 |  |  | 2008-09-23 | 2008-09-24 | 2d | 25d |  | start no earlier than 2004-03-31 | SD1: KaiYue; SD3:Simon; SA: Richard | 33.18h |  | Task | Rework |

Notes:
- 52: 92階料號 主檔[by itemnum] / 92階料號 主檔(for MC)[by itemnum] / 92階料號 總覽[by deptcode] / 93階料號 主檔[by itemnum] / 93階料號 總覽[by deptcode] / 94階料號 主檔[by itemnum] / 94階料號 主檔(for MC)[by itemnum] / 94階料號 總覽[by deptcode] / 94階料號 總覽 For MC[by deptcode ](?:確認是否可以整併) / 查詢-94階料號 控管量 for_pur / 部門內控管料號 / 料號與替代料號對應總覽
- 57: Identify peers and conduct code reviews by using standard checklists and other standards
- 58: Fix code review defects and other best practices suggested by the peers / reviewers
- 60: Develop detailed programs by using designs and other standards
- 61: Identify peers and conduct code reviews by using standard checklists and other standards
- 62: Fix code review defects and other best practices suggested by the peers / reviewers
- 63: 1.公司(CMO,CMOCHINA,CMECHINA) / [依ERP 公司帳本來分類; D:ITEAM教材00.Password&TNSERP_OU_NO_mappingtable.xls] / 1.1 倉庫 / 1.2 呆滯天數參數設定 / 2.類別 / 3.貨幣 / 4.匯率 / 5.簽核流程 / 5.2工作流程管理 / 5.3工作流程設計(BIZ Flow) / 5.4動作 / 5.5角色 / 5.6聯絡範本 / 6.時效管理機制(alert mail & trigger even) / 7.授權 / 7.1安全群組(group) / 7.2使用者(maxuser) / 8.部門廠區對應維護與查詢 / 9.消滅部門與其主管查詢(維護)表 / 10.每日資料拋轉機制Monitor / 11.流程內申請單狀態變更作業 / 12.公佈欄
- 64: Develop detailed programs by using designs and other standards
- 65: Identify peers and conduct code reviews by using standard checklists and other standards
- 66: Fix code review defects and other best practices suggested by the peers / reviewers
- 67: 92階 料號新增/ 庫存異動 / 92階 非週期性需求 / 93階 料號新增/ 庫存異動 / 93階 訂製品需求 / 94階 料號新增/ 庫存異動 / 94階 保養需求 / 料號規格異動
- 68: Develop detailed programs by using designs and other standards
- 69: Identify peers and conduct code reviews by using standard checklists and other standards
- 70: Fix code review defects and other best practices suggested by the peers / reviewers
- 71: Develop detailed programs by using designs and other standards
- 76: Identify peers and conduct code reviews by using standard checklists and other standards
- 77: Fix code review defects and other best practices suggested by the peers / reviewers

| ID | WBS | Task | Type | Duration | Start | Finish | Predecessors | Complete | Remaining | Baseline start | Baseline finish | Baseline duration | Total slack | Free slack | Constraint | Resources | Work | Actual work | Text1 | Text2 |
| --- | --- | --- | --- | --- | --- | --- | --- | --- | --- | --- | --- | --- | --- | --- | --- | --- | --- | --- | --- | --- |
| 78 | 2.3.4.5 | **Coding & Unit Test - Module 審核作業** |  | 25d | 2013-01-03 | 2013-02-06 |  |  |  | 2008-09-23 | 2008-09-27 | 5d | 0d |  |  |  | 216h |  | Activity |  |
| 79 | 2.3.4.5.1 | Coding & Unit Test of Module 審核作業 |  | 11d | 2013-01-03 | 2013-01-17 | 44 |  |  | 2008-09-23 | 2008-09-26 | 4d | 0d |  | start no earlier than 2004-03-31 | SD3:Simon; SD1: KaiYue | 176h |  | Task | Engineering Activity |
| 80 | 2.3.4.5.2 | Code Review of Module 審核作業 |  | 1d | 2013-02-01 | 2013-02-01 | 123 |  |  | 2008-09-27 | 2008-09-27 | 1d | 0d |  | start no earlier than 2004-03-31 | SD1: KaiYue; SD3:Simon | 16h |  | Task | Review |
| 81 | 2.3.4.6 | Review & Rework & Verify on Module 審核作業 |  | 1d | 2013-02-06 | 2013-02-06 | 124 |  |  | 2008-09-28 | 2008-09-28 | 1d | 8.73d |  | start no earlier than 2004-03-31 | SD1: KaiYue; SA: Richard; SD3:Simon | 24h |  | Task | Rework |
| 82 | 3.2.2.8 | **Coding & Unit Test - Module 查詢/重訂購- 控管量** |  | 0d | 2013-01-02 | 2013-01-02 |  |  |  | 2008-09-23 | 2008-09-27 | 5d | 42d |  |  |  |  |  | Activity |  |
| 83 | 3.2.2.8.1 | Coding & Unit Test of Module查詢/重訂購- 控管量 | milestone | 0d | 2013-01-02 | 2013-01-02 | 46 |  |  | 2008-09-23 | 2008-09-26 | 4d | 42d | 0d | start no earlier than 2004-03-31 | SD3:Simon; SD1: KaiYue |  |  | Task | Engineering Activity |
| 84 | 3.2.2.8.2 | Code Review of Module 查詢/重訂購- 控管量 | milestone | 0d | 2013-01-02 | 2013-01-02 | 126 |  |  | 2008-09-27 | 2008-09-27 | 1d | 42d | 0d | start no earlier than 2004-03-31 | SD1: KaiYue; SD3:Simon |  |  | Task | Review |
| 85 | 3.2.2.8.3 | Review & Rework & Verify on Module 查詢/重訂購- 控管量 | milestone | 0d | 2013-01-02 | 2013-01-02 | 127 |  |  | 2008-09-28 | 2008-09-28 | 1d | 42d |  | start no earlier than 2004-03-31 | SD1: KaiYue; SA: Richard; SD3:Simon |  |  | Task | Rework |
| 87 | 2.5 | **System test** |  | 6.67d | 2013-02-07 | 2013-02-15 |  |  |  | 2008-10-08 | 2008-10-14 | 5d | 8.73d |  |  |  | 132h |  | Activity |  |
| 88 | 2.5 | **Integration Test** |  | 3.33d | 2013-02-07 | 2013-02-12 | 78 |  |  | 2008-10-08 | 2008-10-10 | 3d | 8.73d | 0d |  |  | 72h |  | Phase |  |
| 89 | 2.5.2.1 | Establish Integration Test Environment |  | 1.5d | 2013-02-07 | 2013-02-08 |  |  |  | 2008-10-08 | 2008-10-08 | 1d | 10.57d |  | start no earlier than 2008-10-08 | SD1: KaiYue; SD4:春呈 | 24h |  | Task | Testing |
| 90 | 2.5.2.2 | Integration testing of various modules & Document Test Results |  | 2d | 2013-02-07 | 2013-02-08 |  |  |  | 2008-10-08 | 2008-10-09 | 2d | 8.73d | 0d | start no earlier than 2008-10-08 | SD4:春呈 | 16h |  | Task | Testing |
| 91 | 2.5.2.3 | Rework & Verification related to Integration Testing |  | 1.33d | 2013-02-11 | 2013-02-12 | 90 |  |  | 2008-10-10 | 2008-10-10 | 1d | 8.73d |  | start no earlier than 2008-10-08 | SD1: KaiYue; SA: Richard; SD4:春呈 | 32h |  | Task | Rework |
| 92 | 2.5.3 | **Performance Test** |  | 3.33d | 2013-02-12 | 2013-02-15 | 88 |  |  | 2008-10-13 | 2008-10-14 | 2d | 8.73d | 0d |  |  | 60h |  | Phase |  |
| 93 | 2.5.3.1 | Establish System Test Environment |  | 1.2d | 2013-02-12 | 2013-02-13 |  |  |  | 2008-10-13 | 2008-10-13 | 1d | 10.87d |  | start no earlier than 2008-10-08 | SD1: KaiYue; SD4:春呈 | 12h |  | Task | Testing |
| 94 | 2.5.3.2 | Conduct System Testing & Document Test Results |  | 2d | 2013-02-12 | 2013-02-14 |  |  |  | 2008-10-13 | 2008-10-13 | 1d | 8.73d | 0d | start no earlier than 2004-03-31 | SD4:春呈 | 16h |  | Task | Testing |
| 95 | 2.5.3.3 | Rework & Verification related to System Testing |  | 1.33d | 2013-02-14 | 2013-02-15 | 94 |  |  | 2008-10-14 | 2008-10-14 | 1d | 8.73d |  | start no earlier than 2004-03-31 | SD1: KaiYue; SA: Richard; SD4:春呈 | 32h |  | Task | Rework |
| 96 | 2.6 | **Release** |  | 1.6d | 2013-02-15 | 2013-02-19 | 92 |  |  | 2008-10-15 | 2008-10-16 | 2d | 8.73d |  |  |  | 24h |  | Phase |  |
| 97 | 2.6.1 | Preparation of Release note |  | 1d | 2013-02-15 | 2013-02-18 |  |  |  | 2008-10-15 | 2008-10-15 | 1d | 9.33d |  | start no earlier than 2004-03-31 | SA: Richard | 8h |  | Task | Engineering Activity |
| 98 | 2.6.2 | Release program units |  | 1.6d | 2013-02-15 | 2013-02-19 |  |  |  | 2008-10-16 | 2008-10-16 | 1d | 8.73d |  | start no earlier than 2008-10-16 | SA: Richard; SD1: KaiYue [50%]; SD2:紘杰 [50%] | 16h |  | Task | Engineering Activity |
| 99 | 2.7 | **Acceptance Test** |  | 109.5d | 2012-09-19 A | 2013-02-19 |  | 17% | 91.25d | 2008-10-17 | 2008-10-29 | 9d | 8d | 0d |  |  | 1504.67h | 303.98h | Phase |  |
| 100 | 2.3.4 | **Provide onsite support to the Acceptance Testing** |  | 109.5d | 2012-09-19 A | 2013-02-19 |  | 17% | 90.84d | 2008-09-08 | 2008-09-28 | 17d | 8d |  |  | SA: Richard; Customer: Jason [50%] | 1488.67h | 303.98h | Phase |  |
| 101 | 3.5.1.1 | **Unit Test - Module 基本資料查詢** |  | 11d | 2012-09-19 A | 2012-10-04 |  | 50% | 5.5d | 2008-09-16 | 2008-09-25 | 8d | 105.5d |  |  |  | 70.67h | 40h | Activity |  |
| 102 | 3.5.1.1.1 | Unit Test of Module 基本資料查詢 |  | 5d | 2012-09-19 A | 2012-09-26 A | 49 | 100% |  | 2008-09-16 | 2008-09-24 | 7d |  |  | start no earlier than 2004-03-31 | SD1: KaiYue [50%]; Customer: Jason [50%] | 40h | 40h | Task | Engineering Activity |
| 103 | 3.5.1.1.2 | Review & Verify on Module 基本資料查詢 |  | 5d | 2012-09-27 | 2012-10-04 | 50 |  |  | 2008-09-26 | 2008-09-27 | 2d | 105.5d | 0d | finish no earlier than 2008-09-27 | SD1: KaiYue [50%]; Customer: Jason [50%] | 30.67h |  | Task | Rework |

Notes:
- 78: 92階 料號新增/ 庫存異動 / 92階 非週期性需求 / 93階 料號新增/ 庫存異動 / 93階 訂製品需求 / 94階 料號新增/ 庫存異動 / 94階 保養需求 / 料號規格異動 / 審核完畢之(待開立PR)申請單
- 79: Develop detailed programs by using designs and other standards
- 80: Identify peers and conduct code reviews by using standard checklists and other standards
- 81: Fix code review defects and other best practices suggested by the peers / reviewers
- 82: 查詢/重訂購- 92階料號 控管量 [ 未啟用:重訂購] / 查詢/重訂購-93階料號 控管量[ 未啟用:重訂購] / 查詢/重訂購-94階料號 控管量[已啟用:重訂購]
- 83: Develop detailed programs by using designs and other standards
- 84: Identify peers and conduct code reviews by using standard checklists and other standards
- 85: Fix code review defects and other best practices suggested by the peers / reviewers
- 89: Test environment includes hardware, software, communication etc
- 90: Conduct integration testing as per Integration test plan and test cases prepared for this purpose
- 91: Fix integration testing defects
- 93: Test environment includes hardware, software, communication etc
- 94: Conduct system testing as per the System Test Plan and Test Cases designed for this purpose
- 95: Fix System testing defects
- 97: Prepare a release note which consists work products to be delivered, configuration management issues etc. Use standard template for the same.
- 98: Release all program units pertaining to this stage as per Release note
- 100: Provide complete support to the acceptance testing as per the contractual agreement
- 101: 1.員工資料 / 2.供應商 / 3.系統開立帳號與權限清單 / 4.部門已開立帳號與權限清單 / 5.開立帳號現況總覽 / 6.零件主檔 / 7.零件主檔 for MC
- 102: Develop detailed programs by using designs and other standards
- 103: Fix code review defects and other best practices suggested by the peers / reviewers

| ID | WBS | Task | Type | Duration | Start | Finish | Predecessors | Complete | Remaining | Baseline start | Baseline finish | Baseline duration | Total slack | Free slack | Constraint | Resources | Work | Actual work | Text1 | Text2 |
| --- | --- | --- | --- | --- | --- | --- | --- | --- | --- | --- | --- | --- | --- | --- | --- | --- | --- | --- | --- | --- |
| 104 | 3.5.1.2 | **Unit Test - Module 料號主檔 查詢** |  | 10d | 2012-11-07 A | 2012-11-20 |  | 43% | 5.65d | 2008-09-23 | 2008-09-27 | 5d | 73d |  |  |  | 104h | 40h | Activity |  |
| 105 | 3.5.1.2.1 | 料號 主檔 |  | 5d | 2012-11-12 A | 2012-11-19 A | 53 | 100% |  |  |  |  |  |  |  | Customer: Jason [50%] | 20h | 20h |  |  |
| 106 | 3.5.1.2.2 | 料號 總覽 |  | 5d | 2012-11-07 | 2012-11-13 | 54 |  |  |  |  |  | 78d |  |  | Customer: Jason [50%] | 20h |  |  |  |
| 107 | 3.5.1.2.3 | 部門內控管料號 |  | 5d | 2012-11-14 | 2012-11-20 | 55 |  |  |  |  |  | 73d |  |  | Customer: Jason [50%] | 20h |  |  |  |
| 108 | 3.5.1.2.4 | 料號與替代料號對應總覽 |  | 5d | 2012-11-07 A | 2012-11-13 A | 56 | 100% |  |  |  |  |  |  |  | Customer: Jason [50%] | 20h | 20h |  |  |
| 109 | 3.5.1.2.5 | Review & Rework & Verify on Module 料號主檔/總覽 查詢 |  | 3d | 2012-11-14 | 2012-11-16 | 108 |  |  | 2008-09-28 | 2008-09-28 | 1d | 73d | 0d | start no earlier than 2004-03-31 | Customer: Jason [50%]; SD2:紘杰 [50%] | 24h |  | Task | Rework |
| 110 | 2.3.4.1 | **Unit Test - Module 系統登錄 + 首頁** |  | 8d | 2013-01-07 | 2013-01-16 |  |  |  | 2008-09-08 | 2008-09-15 | 6d | 31d |  |  |  |  |  | Activity |  |
| 111 | 2.3.4.1.1 | Unit Test of Module 系統登錄 + 首頁 |  | 5d | 2013-01-07 | 2013-01-11 | 60 |  |  | 2008-09-08 | 2008-09-12 | 5d | 31d | 0d | start no earlier than 2004-03-31 |  |  |  | Task | Engineering Activity |
| 112 | 3.5.1.3.2 | Review & Verify on Module 系統登錄 + 首頁 |  | 2d | 2013-01-15 | 2013-01-16 | 61 |  |  | 2008-09-16 | 2008-09-17 | 2d | 31d | 0d | start no earlier than 2004-03-31 |  |  |  | Task | Rework |
| 113 | 2.3.4.7 | **Unit Test - Module 系統維護** |  | 13d | 2013-02-01 | 2013-02-19 |  |  |  | 2008-09-16 | 2008-09-25 | 8d | 6d |  |  |  |  |  | Activity |  |
| 114 | 2.3.4.7.1 | Unit Test of Module 系統維護 |  | 10d | 2013-02-01 | 2013-02-14 | 64 |  |  | 2008-09-16 | 2008-09-24 | 7d | 6d | 0d | start no earlier than 2004-03-31 |  |  |  | Task | Engineering Activity |
| 115 | 2.3.4.8 | Review & Verify on Module 系統維護 |  | 2d | 2013-02-18 | 2013-02-19 | 65 |  |  | 2008-09-26 | 2008-09-27 | 2d | 6d | 0d | finish no earlier than 2008-09-27 |  |  |  | Task | Rework |
| 116 | 3.5.1.5 | **Unit Test - Module 歷史查詢** |  | 13d | 2013-01-25 | 2013-02-12 |  |  |  | 2008-09-23 | 2008-09-27 | 5d | 12d |  |  |  |  |  | Activity |  |
| 117 | 3.5.1.5.1 | Unit Test of Module 歷史查詢 |  | 10d | 2013-01-25 | 2013-02-07 | 68 |  |  | 2008-09-23 | 2008-09-26 | 4d | 12d | 0d | start no earlier than 2004-03-31 |  |  |  | Task | Engineering Activity |
| 118 | 3.5.1.5.2 | Review & Verify on Module 歷史查詢 |  | 2d | 2013-02-11 | 2013-02-12 | 69 |  |  | 2008-09-28 | 2008-09-28 | 1d | 12d | 0d | start no earlier than 2004-03-31 |  |  |  | Task | Rework |
| 119 | 2.3.4.3 | **Unit Test - Module 申請作業** |  | 14d | 2013-01-08 | 2013-01-25 |  |  |  | 2008-09-08 | 2008-09-22 | 11d | 25d |  |  |  |  |  | Activity |  |
| 120 | 2.3.4.3.1 | Unit Test of Module 申請作業 |  | 10d | 2013-01-14 | 2013-01-25 | 71 |  |  | 2008-09-08 | 2008-09-19 | 10d | 25d |  | start no earlier than 2004-03-31 |  |  |  | Task | Engineering Activity |
| 121 | 3.5.1.6.2 | Review & Verify on Module 申請作業 |  | 2d | 2013-01-08 | 2013-01-09 | 76 |  |  | 2008-09-23 | 2008-09-24 | 2d | 25d | 0d | start no earlier than 2004-03-31 |  |  |  | Task | Rework |
| 122 | 2.3.4.5 | **Unit Test - Module 審核作業** |  | 13d | 2013-01-18 | 2013-02-05 |  |  |  | 2008-09-23 | 2008-09-27 | 5d | 0d |  |  |  |  |  | Activity |  |
| 123 | 2.3.4.5.1 | Unit Test of Module 審核作業 |  | 10d | 2013-01-18 | 2013-01-31 | 79 |  |  | 2008-09-23 | 2008-09-26 | 4d | 0d |  | start no earlier than 2004-03-31 |  |  |  | Task | Engineering Activity |
| 124 | 2.3.4.6 | Review & Verify on Module 審核作業 |  | 2d | 2013-02-04 | 2013-02-05 | 80 |  |  | 2008-09-28 | 2008-09-28 | 1d | 0d |  | start no earlier than 2004-03-31 |  |  |  | Task | Rework |
| 125 | 3.5.1.8 | **Unit Test - Module 查詢/重訂購- 控管量** |  | 0d | 2013-01-02 | 2013-01-02 |  |  |  | 2008-09-23 | 2008-09-27 | 5d | 42d |  |  |  |  |  | Activity |  |
| 126 | 3.5.1.8.1 | Unit Test of Module查詢/重訂購- 控管量 | milestone | 0d | 2013-01-02 | 2013-01-02 | 83 |  |  | 2008-09-23 | 2008-09-26 | 4d | 42d | 0d | start no earlier than 2004-03-31 |  |  |  | Task | Engineering Activity |
| 127 | 3.5.1.8.2 | Review & Verify on Module 查詢/重訂購- 控管量 | milestone | 0d | 2013-01-02 | 2013-01-02 | 84 |  |  | 2008-09-28 | 2008-09-28 | 1d | 42d | 0d | start no earlier than 2004-03-31 |  |  |  | Task | Rework |
| 129 | 2.7.3.2 | Obtain acceptance test report | milestone | 0d | 2013-02-12 | 2013-02-12 | 88 |  |  | 2008-10-21 | 2008-10-22 | 2d | 13.67d |  | start no earlier than 2004-03-31 |  |  |  | Task | Project Mgmt. |
| 130 | 2.7.3.3 | Re-work and close post release defects |  | 1d | 2013-02-06 | 2013-02-06 | 122 |  |  | 2008-10-23 | 2008-10-27 | 3d | 0d |  | start no earlier than 2004-03-31 |  |  |  | Task | Rework |
| 131 | 2.7.3.4 | Final delevery and Installation |  | 1d | 2013-02-07 | 2013-02-07 | 130 |  |  | 2008-10-28 | 2008-10-29 | 2d | 0d |  | start no earlier than 2008-10-28 | SA: Richard; Customer: Jason | 16h |  | Task | Project Mgmt. |

Notes:
- 104: 92階料號 主檔[by itemnum] / 92階料號 主檔(for MC)[by itemnum] / 92階料號 總覽[by deptcode] / 93階料號 主檔[by itemnum] / 93階料號 總覽[by deptcode] / 94階料號 主檔[by itemnum] / 94階料號 主檔(for MC)[by itemnum] / 94階料號 總覽[by deptcode] / 94階料號 總覽 For MC[by deptcode ](?:確認是否可以整併) / 查詢-94階料號 控管量 for_pur / 部門內控管料號 / 料號與替代料號對應總覽
- 109: Fix code review defects and other best practices suggested by the peers / reviewers
- 111: Develop detailed programs by using designs and other standards
- 112: Fix code review defects and other best practices suggested by the peers / reviewers
- 113: 1.公司(CMO,CMOCHINA,CMECHINA) / [依ERP 公司帳本來分類; D:ITEAM教材00.Password&TNSERP_OU_NO_mappingtable.xls] / 1.1 倉庫 / 1.2 呆滯天數參數設定 / 2.類別 / 3.貨幣 / 4.匯率 / 5.簽核流程 / 5.2工作流程管理 / 5.3工作流程設計(BIZ Flow) / 5.4動作 / 5.5角色 / 5.6聯絡範本 / 6.時效管理機制(alert mail & trigger even) / 7.授權 / 7.1安全群組(group) / 7.2使用者(maxuser) / 8.部門廠區對應維護與查詢 / 9.消滅部門與其主管查詢(維護)表 / 10.每日資料拋轉機制Monitor / 11.流程內申請單狀態變更作業 / 12.公佈欄
- 114: Develop detailed programs by using designs and other standards
- 115: Fix code review defects and other best practices suggested by the peers / reviewers
- 116: 92階 料號新增/ 庫存異動 / 92階 非週期性需求 / 93階 料號新增/ 庫存異動 / 93階 訂製品需求 / 94階 料號新增/ 庫存異動 / 94階 保養需求 / 料號規格異動
- 117: Develop detailed programs by using designs and other standards
- 118: Fix code review defects and other best practices suggested by the peers / reviewers
- 119: 92階 料號新增/ 庫存異動 / 92階 非週期性需求 / 93階 料號新增/ 庫存異動 / 93階 訂製品需求 / 94階 料號新增/ 庫存異動 / 94階 保養需求 / 料號規格異動
- 120: Develop detailed programs by using designs and other standards
- 121: Fix code review defects and other best practices suggested by the peers / reviewers
- 122: 92階 料號新增/ 庫存異動 / 92階 非週期性需求 / 93階 料號新增/ 庫存異動 / 93階 訂製品需求 / 94階 料號新增/ 庫存異動 / 94階 保養需求 / 料號規格異動 / 審核完畢之(待開立PR)申請單
- 123: Develop detailed programs by using designs and other standards
- 124: Fix code review defects and other best practices suggested by the peers / reviewers
- 125: 查詢/重訂購- 92階料號 控管量 [ 未啟用:重訂購] / 查詢/重訂購-93階料號 控管量[ 未啟用:重訂購] / 查詢/重訂購-94階料號 控管量[已啟用:重訂購]
- 126: Develop detailed programs by using designs and other standards
- 127: Fix code review defects and other best practices suggested by the peers / reviewers

| ID | WBS | Task | Type | Duration | Start | Finish | Predecessors | Baseline start | Baseline finish | Baseline duration | Total slack | Free slack | Constraint | Resources | Text1 | Text2 | Text8 |
| --- | --- | --- | --- | --- | --- | --- | --- | --- | --- | --- | --- | --- | --- | --- | --- | --- | --- |
| 132 | 2.8 | **Project Closure** |  | 0d | 2013-02-19 | 2013-02-19 | 99 | 2008-10-30 | 2008-11-03 | 3d | 8d |  |  |  | Phase |  |  |
| 133 | 2.8.1 | Assess Customer Satisfaction | milestone | 0d | 2013-02-19 | 2013-02-19 |  | 2008-10-30 | 2008-10-30 | 1d | 8d | 0d | start no earlier than 2004-03-31 | PM: Richard | Task | Project Mgmt. | key:255 |
| 134 | 2.8.2 | Summarize Project Results and Lessons Learned | milestone | 0d | 2013-02-19 | 2013-02-19 |  | 2008-10-30 | 2008-10-30 | 1d | 8d |  | start no earlier than 2004-03-31 | PM: Richard [50%]; SA: Richard [50%] | Task | Project Mgmt. | key:256 |
| 135 | 2.8.3 | Review and Recognize Team Performance | milestone | 0d | 2013-02-19 | 2013-02-19 | 133 | 2008-10-31 | 2008-10-31 | 1d | 8d |  |  | PM: Richard [50%] | Task | Project Mgmt. | key:257 |
| 136 | 2.8.5 | Project Closure Meeting | milestone | 0d | 2013-02-19 | 2013-02-19 |  | 2008-11-03 | 2008-11-03 | 1d | 8d |  | start no earlier than 2008-10-31 | SV: Jack; Customer: Jason; PM: Richard | Task | Project Mgmt. |  |
| 137 | 2.8.6 | Close Out the Project Records | milestone | 0d | 2013-02-19 | 2013-02-19 |  | 2008-11-03 | 2008-11-03 | 1d | 8d |  | start no earlier than 2008-11-03 | PM: Richard | Task | Project Mgmt. | key:259 |
| 139 | 3.7 | SAP I/F |  | 15d | 2013-02-08 | 2013-02-28 | 131 |  |  |  | 1d |  |  |  |  |  |  |
| 140 | 3.8 | Data Migration |  | 15d | 2013-02-08 | 2013-02-28 | 131 |  |  |  | 0d |  |  |  |  |  |  |
| 141 | 3.9 | Trainning |  | 10d | 2013-02-08 | 2013-02-21 | 131 |  |  |  | 6d |  |  |  |  |  |  |
| 142 | 3.10 | Go-Live |  | 1d | 2013-03-01 | 2013-03-01 | 140 |  |  |  | 0d |  |  |  |  |  |  |

Notes:
- 133: Document the overall satisfaction with the project.
- 134: Work with the project team to capture relevant experience and lessons learned for the benefit of future projects.
- 135: Complete performance reviews for each team member, recognize efforts and accomplishments, and celebrate success.
- 137: Update and archive project documentation and make sure that all close out conditions have been met.
