# MRO料號合併

Schedule from MS Project, 2012-11-01 to 2013-02-15.
CMO

## Calendars

- 標準: Mon-Fri 08:00-12:00, 13:00-17:00; Sat-Sun off.

## Schedule

| ID | WBS | Task | Duration | Start | Finish | Predecessors | Total slack | Constraint |
| --- | --- | --- | --- | --- | --- | --- | --- | --- |
| 1 | 1 | **MRO料號合併** | 77d | 2012-11-01 | 2013-02-15 |  | 0d |  |
| 2 | 1.1 | 料號coding rule確認 | 1d | 2012-11-01 | 2012-11-01 |  | 0d | start no earlier than 2012-11-01 |
| 3 | 1.2 | **(料號管理模組)料號新增申請/規格異動** | 22d | 2012-11-02 | 2012-12-03 | 2 | 0d |  |
| 4 | 1.2.1 | **A.新增申請** | 6d | 2012-11-02 | 2012-11-09 |  | 0d |  |
| 5 | 1.2.1.1 | A_ITEM_INSERT | 3d | 2012-11-02 | 2012-11-06 |  | 3d |  |
| 6 | 1.2.1.2 | PRLINE_DELETE | 3d | 2012-11-02 | 2012-11-06 |  | 3d |  |
| 7 | 1.2.1.3 | PRLINE_UPDATEITEM x 3 | 6d | 2012-11-02 | 2012-11-09 |  | 0d |  |
| 8 | 1.2.2 | **B. 規格異動** | 7d | 2012-11-12 | 2012-11-20 | 4 | 0d |  |
| 9 | 1.2.2.1 | ITEMSPEC_CHANGE | 7d | 2012-11-12 | 2012-11-20 |  | 0d |  |
| 10 | 1.2.3 | 料號查詢畫面 | 5d | 2012-11-02 | 2012-11-08 |  | 71d |  |
| 12 | 1.2.4 | **{middle func.新增/變更物料規格& 建議驗收人名單}** | 6d | 2012-11-21 | 2012-11-28 | 8 | 0d |  |
| 13 | 1.2.4.1 | PjItemInsp | 3d | 2012-11-21 | 2012-11-23 |  | 3d |  |
| 14 | 1.2.4.2 | PjItemAttr x 3 | 6d | 2012-11-21 | 2012-11-28 |  | 0d |  |
| 15 | 1.2.5 | **{EAM <-> ERP I/F 資料拋轉}** | 3d | 2012-11-29 | 2012-12-03 | 12 | 0d |  |
| 16 | 1.2.5.1 | EAM_EAM2ERP_PART_P | 3d | 2012-11-29 | 2012-12-03 |  | 0d |  |
| 17 | 1.2.5.2 | EAM_ERP2EAM_PART_P | 3d | 2012-11-29 | 2012-12-03 |  | 0d |  |
| 20 | 1.3 | **(物料控管模組)料號需求申請/庫存異動申請** | 44d | 2012-12-04 | 2013-02-01 |  | 0d |  |
| 21 | 1.3.1 | **C. 需求申請** | 18d | 2012-12-04 | 2012-12-27 | 15 | 0d |  |
| 22 | 1.3.1.1 | PRLINE_PMINSERT | 3d | 2012-12-04 | 2012-12-06 |  | 0d |  |
| 23 | 1.3.1.2 | PRLINE_UPDATEPMREQ x 3 | 3d | 2012-12-07 | 2012-12-11 | 22 | 0d |  |
| 24 | 1.3.1.3 | PRLINE_BEFORE_DELETE x 2 | 5d | 2012-12-12 | 2012-12-18 | 23 | 7d |  |
| 25 | 1.3.1.4 | PRLINE_DELETE | 3d | 2012-12-12 | 2012-12-14 | 23 | 9d |  |
| 26 | 1.3.1.5 | PRLINE_REJECT x 2 | 3d | 2012-12-12 | 2012-12-14 | 23 | 0d |  |
| 27 | 1.3.1.6 | PRLINE_ALTITEM_INSERT | 3d | 2012-12-17 | 2012-12-19 | 26 | 0d |  |
| 28 | 1.3.1.7 | PRLINE_COSTTYPE x 2 | 6d | 2012-12-20 | 2012-12-27 | 27 | 0d |  |
| 29 | 1.3.1.8 | PR_SAVE x 2 | 3d | 2012-12-20 | 2012-12-24 | 27 | 3d |  |
| 30 | 1.3.1.9 | PR_SAVE_AFTER | 2d | 2012-12-20 | 2012-12-21 | 27 | 4d |  |
| 31 | 1.3.1.10 | PR_STATUS_CHANGE | 2d | 2012-12-20 | 2012-12-21 | 27 | 4d |  |

| ID | WBS | Task | Type | Duration | Start | Finish | Predecessors | Total slack |
| --- | --- | --- | --- | --- | --- | --- | --- | --- |
| 32 | 1.3.2 | **D. 庫存異動申請** |  | 11d | 2012-12-28 | 2013-01-11 | 21 | 0d |
| 33 | 1.3.2.1 | PRLINE_INSERT x 3 |  | 6d | 2012-12-28 | 2013-01-04 |  | 0d |
| 34 | 1.3.2.2 | PRLINE_UPDATE x 3 |  | 5d | 2013-01-07 | 2013-01-11 | 33 | 0d |
| 35 | 1.3.2.3 | PRLINE_UPDATEITEM x 4 |  | 5d | 2013-01-07 | 2013-01-11 | 33 | 0d |
| 36 | 1.3.3 | 料號查詢畫面 |  | 5d | 2013-01-14 | 2013-01-18 | 32 | 10d |
| 38 | 1.3.4 | **{更新 INVBALANCES/ INVENTORY}** |  | 6d | 2013-01-14 | 2013-01-21 | 32 | 0d |
| 39 | 1.3.4.1 | INSERT_ERP_PR_IMPORT |  | 3d | 2013-01-14 | 2013-01-16 |  | 3d |
| 40 | 1.3.4.2 | INVBALANCES_INSERTUPDATE |  | 3d | 2013-01-14 | 2013-01-16 |  | 0d |
| 41 | 1.3.4.3 | CMODEPTMINLEVEL_UPDATE |  | 3d | 2013-01-17 | 2013-01-21 | 40 | 0d |
| 42 | 1.3.4.4 | 94_MMC_EOQ_UPDATE |  | 3d | 2013-01-17 | 2013-01-21 | 40 | 0d |
| 43 | 1.3.4.5 | UPDATE_INVENTORY_T |  | 3d | 2013-01-17 | 2013-01-21 | 40 | 0d |
| 44 | 1.3.5 | **{EAM <-> ERP I/F 資料拋轉}** |  | 9d | 2013-01-22 | 2013-02-01 | 38 | 0d |
| 45 | 1.3.5.1 | READ_EAM_SNAPSHOT_ERP_PO |  | 3d | 2013-01-22 | 2013-01-24 |  | 6d |
| 46 | 1.3.5.2 | READ_EAM_SNAPSHOT_ERP_PO_AFTER |  | 3d | 2013-01-22 | 2013-01-24 |  | 0d |
| 47 | 1.3.5.3 | READ_EAM_SNAPSHOT_ERP_PR |  | 3d | 2013-01-22 | 2013-01-24 |  | 6d |
| 48 | 1.3.5.4 | READ_EAM_SNAPSHOT_ERP_PR_AFTER |  | 3d | 2013-01-22 | 2013-01-24 |  | 6d |
| 49 | 1.3.5.5 | READ_EAM_BSS2EAM_ONHAND_T |  | 3d | 2013-01-25 | 2013-01-29 | 46 | 3d |
| 50 | 1.3.5.6 | READ_ZINV_EAM_ITEM_CONSIGN |  | 3d | 2013-01-25 | 2013-01-29 | 46 | 3d |
| 51 | 1.3.5.7 | READ_ZINV_EAM_ITEM_ONHAND_QTY |  | 3d | 2013-01-25 | 2013-01-29 | 46 | 0d |
| 52 | 1.3.5.8 | READ_ZINV_EAM_MTL_TRX |  | 3d | 2013-01-30 | 2013-02-01 | 51 | 0d |
| 53 | 1.3.5.9 | READ_ZINV_EAM_MTL_TRX_AFTER |  | 3d | 2013-01-30 | 2013-02-01 | 51 | 0d |
| 54 | 1.4 | SAP I/F |  | 10d | 2013-02-04 | 2013-02-15 | 15, 44 | 0d |
| 55 | 1.5 | Data Migration |  | 10d | 2013-02-04 | 2013-02-15 | 20 | 0d |
| 56 | 1.6 | Trainning |  | 4d | 2013-02-04 | 2013-02-07 | 20 | 6d |
| 57 | 1.7 | Go-Live | milestone | 0d | 2013-02-15 | 2013-02-15 | 55 | 0d |
